# Pfizer Continuum Project Plan

How a schedule from MS Project changed from version to version. A marks actual dates.

## Version 1 (saved 2013-01-04)

| ID | WBS | Task | Duration | Start | Finish | Predecessors | Total float | Constraint |
| --- | --- | --- | --- | --- | --- | --- | --- | --- |
| 1 | 1 | **caIntegrator** | 264d? | 2012-12-03 | 2013-12-05 |  | 17d | start no earlier than 2012-12-03 |
| 2 | 1.1 | **caIntegrator 1.4.01 - patch release** | 24d | 2012-12-05 | 2013-01-07 |  | 255d |  |
| 3 |  | Appscan on QA | 4d | 2013-01-02 | 2013-01-07 |  | 255d | start no earlier than 2013-01-02 |
| 4 |  | Appscan on Stage | 4d | 2012-12-05 | 2012-12-10 |  | 270d | start no earlier than 2012-12-05 |
| 5 |  | QA reports and Approval | 2d | 2012-12-11 | 2012-12-12 | 4 | 270d |  |
| 6 |  | Prod Release | 3d | 2012-12-13 | 2012-12-17 | 5 | 270d |  |
| 7 | 1.2 | **caIntegrator 1.4.1** | 157d? | 2012-12-06 | 2013-07-12 |  | 22d |  |
| 8 |  | MILESTONE: PROJECT KICKOFF | 1d | 2012-12-06 | 2012-12-06 |  | 189d | start no earlier than 2012-12-06 |
| 9 |  | EPLC Project Management Plan | 3d | 2013-01-02 | 2013-01-04 |  | 168d | start no earlier than 2013-01-02 |
| 10 |  | Github Access | 2d | 2013-01-07 | 2013-01-08 |  | 0d | start no earlier than 2013-01-07 |
| 11 |  | OSDI / Build Changes | 20d? | 2013-01-09 | 2013-02-05 | 10 | 0d | start no earlier than 2013-01-02 |
| 12 |  | Bug Fixes | 8d | 2013-02-06 | 2013-02-15 | 11 | 0d |  |
| 13 |  | CSM/UPT upgrade changes | 4d | 2013-02-18 | 2013-02-21 | 12 | 0d |  |
| 14 |  | caBIO replacement changes | 30d | 2013-02-22 | 2013-04-04 | 13 | 0d |  |
| 15 |  | Performance Improvements | 10d | 2013-04-05 | 2013-04-18 | 14 | 0d |  |
| 16 |  | 508 Compliance (100%) | 5d | 2013-04-19 | 2013-04-25 | 15 | 0d |  |
| 17 |  | Regression Testing on QA tier | 12d | 2013-04-26 | 2013-05-13 | 16 | 7.5d |  |
| 18 |  | Installer Testing | 4d | 2013-05-14 | 2013-05-17 | 17 | 38d |  |
| 19 |  | Section 508 testing on QA tier | 2d | 2013-05-20 | 2013-05-21 | 18 | 38d |  |
| 20 |  | Appscan on QA tier | 15d | 2013-05-14 | 2013-06-03 | 17 | 7.5d |  |
| 21 |  | Test Results Review and Reporting | 0d | 2013-06-03 | 2013-06-03 | 20 | 40.5d |  |
| 22 |  | Deploy to STAGE | 1d | 2013-06-04 | 2013-06-04 | 21 | 7.5d |  |
| 23 |  | Appscan on STAGE tier | 15d | 2013-06-05 | 2013-06-25 | 22 | 7.5d |  |
| 24 |  | Regression Testing on STAGE | 5d | 2013-06-05 | 2013-06-11 | 22 | 17.5d |  |
| 25 |  | Test Results Review and Reporting | 3d | 2013-06-26 | 2013-06-28 | 23, 24 | 40.5d |  |
| 26 |  | Create release artifacts | 1d | 2013-06-05 | 2013-06-05 | 22 | 27d |  |
| 27 |  | Deploy to PRODUCTION | 2d | 2013-07-01 | 2013-07-02 | 25 | 40.5d |  |
| 28 |  | Update product landing page | 0.5d | 2013-07-03 | 2013-07-03 | 27 | 40.5d |  |
| 29 |  | QA smoke tests PRODUCTION | 1d | 2013-07-03 | 2013-07-04 | 27, 28 | 40.5d |  |
| 30 |  | MILESTONE: RELEASE 1.4.1 | 0d | 2013-07-04 | 2013-07-04 | 29 | 40.5d | start no earlier than 2012-01-09 |
| 31 |  | User Support | 85d | 2013-03-18 | 2013-07-12 |  | 33d | finish no earlier than 2013-07-12 |
| 32 | 1.3 | **caIntegrator 1.5** | 160d | 2013-04-26 | 2013-12-05 |  | 0d |  |
| 33 |  | Tech Stack Upgrades - Spring | 20d | 2013-04-26 | 2013-05-23 | 16 | 0d |  |
| 34 |  | Bug Fixes and Improvements | 15d | 2013-05-24 | 2013-06-13 | 33 | 0d |  |
| 35 |  | Java 7 upgrade | 30d | 2013-06-14 | 2013-07-25 | 34 | 0d |  |
| 36 |  | Support for release 1.4.1 | 10d | 2013-07-26 | 2013-08-08 | 35 | 0d |  |
| 37 |  | Usability and Other Improvements Requested | 30d | 2013-08-09 | 2013-09-19 | 36 | 0d |  |
| 38 |  | Compliance (EPLC, Section 508) | 5d | 2013-09-20 | 2013-09-26 | 37 | 0d |  |
| 39 |  | MILESTONE: EPLC REVIEW (as needed) | 0d | 2013-09-26 | 2013-09-26 | 38 | 50d | start no earlier than 2012-01-09 |
| 40 |  | Regression Testing on QA tier | 12d | 2013-09-27 | 2013-10-14 | 38 | 0d |  |
| 41 |  | Installer Testing | 4d | 2013-10-15 | 2013-10-18 | 40 | 32d |  |
| 42 |  | Section 508 testing on QA tier | 2d | 2013-10-21 | 2013-10-22 | 41 | 32d |  |
| 43 |  | Appscan on QA tier | 15d | 2013-10-15 | 2013-11-04 | 40 | 0d |  |
| 44 |  | Test Results Review and Reporting | 3d | 2013-11-05 | 2013-11-07 | 43 | 0d |  |
| 45 |  | Deploy to STAGE | 1d | 2013-11-08 | 2013-11-08 | 44 | 0d |  |
| 46 |  | Appscan on STAGE tier | 15d | 2013-11-11 | 2013-11-29 | 45 | 0d |  |
| 47 |  | Regression Testing on STAGE | 5d | 2013-11-11 | 2013-11-15 | 45 | 10d |  |
| 48 |  | Test Results Review and Reporting | 1d | 2013-12-02 | 2013-12-02 | 46, 47 | 0d |  |
| 49 |  | Create release artifacts | 1d | 2013-11-11 | 2013-11-11 | 45 | 18d |  |
| 50 |  | Deploy to PRODUCTION | 2d | 2013-12-03 | 2013-12-04 | 48 | 0d |  |
| 51 |  | Update product landing page | 0.5d | 2013-12-05 | 2013-12-05 | 50 | 0.5d |  |
| 52 |  | QA smoke tests PRODUCTION | 1d | 2013-12-05 | 2013-12-05 | 50 | 0d |  |
| 53 |  | MILESTONE: RELEASE 1.5 | 0d | 2013-12-05 | 2013-12-05 | 52 | 0d | start no earlier than 2012-01-09 |
| 54 |  | User Support | 88d | 2013-08-06 | 2013-12-05 | 7 | 0d | finish no earlier than 2013-12-05 |
| 65 |  | *QA and Systems are external resources and NOT being proposed under this contract. | 0d | 2012-12-03 | 2012-12-03 |  | 260d |  |

## Version 2 (saved 2013-01-08)

Last finish stays 2013-12-05. Complete tasks 0 → 3.

Added:

| ID | Task | Duration | Start | Finish | Constraint | Resources |
| --- | --- | --- | --- | --- | --- | --- |
| 11 | USCF JBOSS issues | 2d | 2013-01-07 | 2013-01-08 | start no earlier than 2013-01-07 | Abe |

Changed:

| ID | Task | Start | Finish | Duration | Complete | Total float | Predecessors | Other |
| --- | --- | --- | --- | --- | --- | --- | --- | --- |
| 1 | **caIntegrator** | 2012-12-03 A |  |  | 0% → 1% | 17d → 0d |  |  |
| 2 | **caIntegrator 1.4.01 - patch release** | 2012-12-05 → 2013-01-02 (+28d) | 2013-01-07 → 2013-01-22 (+15d) | 24d → 15d |  | 255d → 227d |  |  |
| 3 | Appscan on QA |  | 2013-01-07 → 2013-01-09 (+2d) | 4d → 6d |  | 255d → 227d |  |  |
| 4 | Appscan on Stage | 2012-12-05 → 2013-01-10 (+36d) | 2012-12-10 → 2013-01-15 (+36d) |  |  | 270d → 227d | none → 3 |  |
| 5 | QA reports and Approval | 2012-12-11 → 2013-01-16 (+36d) | 2012-12-12 → 2013-01-17 (+36d) |  |  | 270d → 227d |  |  |
| 6 | Prod Release | 2012-12-13 → 2013-01-18 (+36d) | 2012-12-17 → 2013-01-22 (+36d) |  |  | 270d → 227d |  | resources none → Systems* |
| 7 | **caIntegrator 1.4.1** | 2012-12-06 A |  |  | 0% → 3% | 22d → 16d |  |  |
| 8 | MILESTONE: PROJECT KICKOFF | 2012-12-06 A | 2012-12-06 A |  | 0% → 100% | 189d → none |  |  |
| 9 | EPLC Project Management Plan | 2013-01-02 A | 2013-01-04 A |  | 0% → 100% | 168d → none |  |  |
| 10 | Github Access | 2013-01-07 A | 2013-01-08 A |  | 0% → 100% | 0d → none |  |  |
| 12 | OSDI / Build Changes |  |  |  |  |  | 10 → 11 |  |

## Version 3 (saved 2013-02-05)

Note of the change: Latest Version

Last finish stays 2013-12-05. Complete tasks 3 → 8.

Added:

| ID | Task | Duration | Start | Finish | Predecessors | Constraint | Resources |
| --- | --- | --- | --- | --- | --- | --- | --- |
| 12 | UCSF Support (Role Based Permission) | 1d | 2013-01-25 A | 2013-01-25 A | 11 |  | Abe |
| 14 | Local copy to github, split s/w and documentation, license/copyright | 3d? | 2013-01-09 A | 2013-01-11 A |  | start no earlier than 2013-01-09 | Abe |
| 15 | Code Changes | 4d | 2013-01-22 A | 2013-01-25 A |  | start no earlier than 2013-01-22 | Abe |
| 16 | OSDI Phase 1 - complete (Pending AntHill Pro Deployment) | 6d | 2013-01-28 A | 2013-02-04 A | 15 |  | Abe |
| 18 | Fix Appscan Issues | 10d | 2013-02-12 | 2013-02-25 | 17 |  | Abe |
| 19 | Documentation Changes (Context Sensitive links) | 1d? | 2013-02-26 | 2013-02-26 | 18 |  | Abe |
| 20 | AntHill Pro setup | 1d? | 2013-02-27 | 2013-02-27 | 19 |  | System |
| 21 | Final test and Deployment on Dev (Anthill Pro) | 4d | 2013-02-28 | 2013-03-05 | 20 |  | Abe |
| 22 | Appscan on Dev | 4d | 2013-02-27 | 2013-03-04 | 19 | start no earlier than 2013-02-15 | System |
| 48 | Appscan on Dev | 12d | 2013-06-21 | 2013-07-08 | 46 |  |  |

Removed: 13 Bug Fixes; 36 Java 7 upgrade

Changed:

| ID | Task | Start | Finish | Duration | Complete | Total float | Predecessors | Other |
| --- | --- | --- | --- | --- | --- | --- | --- | --- |
| 1 | **caIntegrator** |  |  |  | 1% → 4% |  |  |  |
| 7 | **caIntegrator 1.4.1** |  | 2013-07-12 → 2013-06-11 (-31d) | 157d? → 134d? | 3% → 11% | 16d → 39d |  |  |
| 11 | USCF JBOSS issues | 2013-01-07 A | 2013-01-08 A |  | 0% → 100% | 0d → none |  |  |
| 13 | **OSDI / Build Changes** | 2013-01-09 A | 2013-02-05 → 2013-02-04 A (-1d) | 20d? → 19d? | 0% → 100% | 0d → none | 11 → 12 | constraint start no earlier than 2013-01-02 → none |
| 17 | 508 Compliance (100%) | 2013-04-19 → 2013-02-05 (-73d) | 2013-04-25 → 2013-02-11 (-73d) |  |  | 0d → 59.5d | 44 → 13 |  |
| 23 | Regression Testing on QA tier | 2013-04-26 → 2013-03-05 (-52d) | 2013-05-13 → 2013-03-20 (-54d) |  |  | 22.5d → 59.5d | 17 → 22 |  |
| 24 | Installer Testing | 2013-05-14 → 2013-03-21 (-54d) | 2013-05-17 → 2013-03-26 (-52d) |  |  | 54d → 92d |  |  |
| 25 | Section 508 testing on QA tier | 2013-05-20 → 2013-03-27 (-54d) | 2013-05-21 → 2013-03-28 (-54d) |  |  | 54d → 92d |  |  |
| 26 | Appscan on QA tier | 2013-05-14 → 2013-03-21 (-54d) | 2013-06-03 → 2013-04-10 (-54d) |  |  | 22.5d → 59.5d |  |  |
| 27 | Test Results Review and Reporting | 2013-06-03 → 2013-04-11 (-53d) | 2013-06-03 → 2013-04-11 (-53d) | 0d → 1d |  | 22.5d → 59.5d |  |  |
| 28 | Deploy to STAGE | 2013-06-04 → 2013-04-12 (-53d) | 2013-06-04 → 2013-04-12 (-53d) |  |  | 22.5d → 59.5d |  |  |
| 29 | Appscan on STAGE tier | 2013-06-05 → 2013-04-15 (-51d) | 2013-06-25 → 2013-05-03 (-53d) |  |  | 22.5d → 59.5d |  |  |
| 30 | Regression Testing on STAGE | 2013-06-05 → 2013-04-15 (-51d) | 2013-06-11 → 2013-04-19 (-53d) |  |  | 32.5d → 69.5d |  |  |
| 31 | Test Results Review and Reporting | 2013-06-26 → 2013-05-06 (-51d) | 2013-06-28 → 2013-05-08 (-51d) |  |  | 22.5d → 59.5d |  |  |
| 32 | Create release artifacts | 2013-06-05 → 2013-04-15 (-51d) | 2013-06-05 → 2013-04-15 (-51d) |  |  | 43d → 80d |  |  |
| 33 | Deploy to PRODUCTION | 2013-07-01 → 2013-05-09 (-53d) | 2013-07-02 → 2013-05-10 (-53d) |  |  | 22.5d → 59.5d |  |  |
| 34 | Update product landing page | 2013-07-03 → 2013-05-13 (-51d) | 2013-07-03 → 2013-05-13 (-51d) |  |  | 22.5d → 59.5d |  |  |
| 35 | QA smoke tests PRODUCTION | 2013-07-03 → 2013-05-13 (-51d) | 2013-07-04 → 2013-05-14 (-51d) |  |  | 22.5d → 59.5d |  |  |
| 36 | MILESTONE: RELEASE 1.4.1 | 2013-07-04 → 2013-05-14 (-51d) | 2013-07-04 → 2013-05-14 (-51d) |  |  | 22.5d → 59.5d |  |  |
| 37 | User Support | 2013-03-18 → 2013-02-13 (-33d) | 2013-07-12 → 2013-06-11 (-31d) |  |  | 16d → 39d |  | constraint finish no earlier than 2013-07-12 → finish no earlier than 2013-06-11 |
| 38 | **caIntegrator 1.5** | 2013-04-26 → 2012-12-03 (-144d) |  | 160d → 264d |  |  |  |  |
| 39 | Tech Stack Upgrades - Spring | 2013-04-26 → 2012-12-03 (-144d) | 2013-05-23 → 2012-12-28 (-146d) |  |  | 0d → 76d | 17 → none |  |
| 40 | Bug Fixes and Improvements | 2013-05-24 → 2012-12-31 (-144d) | 2013-06-13 → 2013-02-11 (-122d) | 15d → 25d |  | 0d → 70d |  |  |
| 41 | caBIO replacement changes | 2013-02-22 → 2013-02-12 (-10d) | 2013-04-04 → 2013-03-01 (-34d) | 30d → 14d |  | 0d → 70d | 42 → 40 |  |
| 42 | CSM/UPT upgrade changes | 2013-02-18 → 2013-03-04 (+14d) | 2013-02-21 → 2013-03-07 (+14d) |  |  | 0d → 70d | Bug Fixes → 41 |  |
| 43 | Support for release 1.4.1 | 2013-07-26 → 2013-03-08 (-140d) | 2013-08-08 → 2013-03-21 (-140d) |  |  | 0d → 70d | Java 7 upgrade → 42 |  |
| 44 | Performance Improvements | 2013-04-05 → 2013-03-22 (-14d) | 2013-04-18 → 2013-05-02 (+14d) | 10d → 30d |  | 0d → 70d | 41 → 43 |  |
| 45 | Usability and Other Improvements Requested | 2013-08-09 → 2013-05-03 (-98d) | 2013-09-19 → 2013-06-13 (-98d) |  |  | 0d → 70d | 43 → 44 |  |
| 46 | Compliance (EPLC, Section 508) | 2013-09-20 → 2013-06-14 (-98d) | 2013-09-26 → 2013-06-20 (-98d) |  |  | 0d → 70d |  |  |
| 47 | MILESTONE: EPLC REVIEW (as needed) | 2013-09-26 → 2013-06-20 (-98d) | 2013-09-26 → 2013-06-20 (-98d) |  |  | 50d → 120d |  |  |
| 49 | Regression Testing on QA tier | 2013-09-27 → 2013-06-21 (-98d) | 2013-10-14 → 2013-07-08 (-98d) |  |  | 0d → 70d |  |  |
| 50 | Installer Testing | 2013-10-15 → 2013-07-09 (-98d) | 2013-10-18 → 2013-07-12 (-98d) |  |  | 32d → 102d |  |  |
| 51 | Section 508 testing on QA tier | 2013-10-21 → 2013-07-15 (-98d) | 2013-10-22 → 2013-07-16 (-98d) |  |  | 32d → 102d |  |  |
| 52 | Appscan on QA tier | 2013-10-15 → 2013-07-09 (-98d) | 2013-11-04 → 2013-07-29 (-98d) |  |  | 0d → 70d |  |  |
| 53 | Test Results Review and Reporting | 2013-11-05 → 2013-07-30 (-98d) | 2013-11-07 → 2013-08-01 (-98d) |  |  | 0d → 70d |  |  |
| 54 | Deploy to STAGE | 2013-11-08 → 2013-08-02 (-98d) | 2013-11-08 → 2013-08-02 (-98d) |  |  | 0d → 70d |  |  |
| 55 | Appscan on STAGE tier | 2013-11-11 → 2013-08-05 (-98d) | 2013-11-29 → 2013-08-23 (-98d) |  |  | 0d → 70d |  |  |
| 56 | Regression Testing on STAGE | 2013-11-11 → 2013-08-05 (-98d) | 2013-11-15 → 2013-08-09 (-98d) |  |  | 10d → 80d |  |  |
| 57 | Test Results Review and Reporting | 2013-12-02 → 2013-08-26 (-98d) | 2013-12-02 → 2013-08-26 (-98d) |  |  | 0d → 70d |  |  |
| 58 | Create release artifacts | 2013-11-11 → 2013-08-05 (-98d) | 2013-11-11 → 2013-08-05 (-98d) |  |  | 18d → 88d |  |  |
| 59 | Deploy to PRODUCTION | 2013-12-03 → 2013-08-27 (-98d) | 2013-12-04 → 2013-08-28 (-98d) |  |  | 0d → 70d |  |  |
| 60 | Update product landing page | 2013-12-05 → 2013-08-29 (-98d) | 2013-12-05 → 2013-08-29 (-98d) |  |  | 0.5d → 70.5d |  |  |
| 61 | QA smoke tests PRODUCTION | 2013-12-05 → 2013-08-29 (-98d) | 2013-12-05 → 2013-08-29 (-98d) |  |  | 0d → 70d |  |  |
| 62 | MILESTONE: RELEASE 1.5 | 2013-12-05 → 2013-08-29 (-98d) | 2013-12-05 → 2013-08-29 (-98d) |  |  | 0d → 70d |  |  |

## Version 4 (saved 2013-02-08)

Note of the change: Changes from Feb 8th

Last finish stays 2013-12-05.

Changed:

| ID | Task | Start | Finish | Duration | Total float | Predecessors |
| --- | --- | --- | --- | --- | --- | --- |
| 17 | 508 Compliance (100%) |  | 2013-02-11 → 2013-02-07 (-4d) | 5d → 3d | 59.5d → 61.5d |  |
| 18 | Fix Appscan Issues | 2013-02-12 → 2013-02-08 (-4d) | 2013-02-25 → 2013-02-21 (-4d) |  | 59.5d → 61.5d |  |
| 19 | Documentation Changes (Context Sensitive links) | 2013-02-26 → 2013-02-22 (-4d) | 2013-02-26 → 2013-02-22 (-4d) |  | 59.5d → 61.5d |  |
| 20 | caBIO replacement changes | 2013-02-12 → 2013-02-25 (+13d) | 2013-03-01 → 2013-03-14 (+13d) |  | 70d → 97d | 41 → 19 |
| 21 | AntHill Pro setup | 2013-02-27 → 2013-03-15 (+16d) | 2013-02-27 → 2013-03-15 (+16d) |  | 109d → 97d | 19 → 20, 19 |
| 22 | Final test and Deployment on Dev (Anthill Pro) | 2013-02-28 → 2013-03-18 (+18d) | 2013-03-05 → 2013-03-21 (+16d) |  | 109d → 97d |  |
| 23 | Appscan on Dev | 2013-02-27 → 2013-02-25 (-2d) | 2013-03-04 → 2013-02-28 (-4d) |  | 59.5d → 61.5d |  |
| 24 | Regression Testing on QA tier | 2013-03-05 → 2013-03-01 (-4d) | 2013-03-20 → 2013-03-18 (-2d) |  | 59.5d → 61.5d |  |
| 25 | Installer Testing | 2013-03-21 → 2013-03-19 (-2d) | 2013-03-26 → 2013-03-22 (-4d) |  | 92d → 94d |  |
| 26 | Section 508 testing on QA tier | 2013-03-27 → 2013-03-25 (-2d) | 2013-03-28 → 2013-03-26 (-2d) |  | 92d → 94d |  |
| 27 | Appscan on QA tier | 2013-03-21 → 2013-03-19 (-2d) | 2013-04-10 → 2013-04-08 (-2d) |  | 59.5d → 61.5d |  |
| 28 | Test Results Review and Reporting | 2013-04-11 → 2013-04-09 (-2d) | 2013-04-11 → 2013-04-09 (-2d) |  | 59.5d → 61.5d |  |
| 29 | Deploy to STAGE | 2013-04-12 → 2013-04-10 (-2d) | 2013-04-12 → 2013-04-10 (-2d) |  | 59.5d → 61.5d |  |
| 30 | Appscan on STAGE tier | 2013-04-15 → 2013-04-11 (-4d) | 2013-05-03 → 2013-05-01 (-2d) |  | 59.5d → 61.5d |  |
| 31 | Regression Testing on STAGE | 2013-04-15 → 2013-04-11 (-4d) | 2013-04-19 → 2013-04-17 (-2d) |  | 69.5d → 71.5d |  |
| 32 | Test Results Review and Reporting | 2013-05-06 → 2013-05-02 (-4d) | 2013-05-08 → 2013-05-06 (-2d) |  | 59.5d → 61.5d |  |
| 33 | Create release artifacts | 2013-04-15 → 2013-04-11 (-4d) | 2013-04-15 → 2013-04-11 (-4d) |  | 80d → 82d |  |
| 34 | Deploy to PRODUCTION | 2013-05-09 → 2013-05-07 (-2d) | 2013-05-10 → 2013-05-08 (-2d) |  | 59.5d → 61.5d |  |
| 35 | Update product landing page | 2013-05-13 → 2013-05-09 (-4d) | 2013-05-13 → 2013-05-09 (-4d) |  | 59.5d → 61.5d |  |
| 36 | QA smoke tests PRODUCTION | 2013-05-13 → 2013-05-09 (-4d) | 2013-05-14 → 2013-05-10 (-4d) |  | 59.5d → 61.5d |  |
| 37 | MILESTONE: RELEASE 1.4.1 | 2013-05-14 → 2013-05-10 (-4d) | 2013-05-14 → 2013-05-10 (-4d) |  | 59.5d → 61.5d |  |
| 42 | CSM/UPT upgrade changes | 2013-03-04 → 2013-02-12 (-20d) | 2013-03-07 → 2013-02-15 (-20d) |  | 70d → 84d | 20 → 41 |
| 43 | Support for release 1.4.1 | 2013-03-08 → 2013-02-18 (-18d) | 2013-03-21 → 2013-03-01 (-20d) |  | 70d → 84d |  |
| 44 | Performance Improvements | 2013-03-22 → 2013-03-04 (-18d) | 2013-05-02 → 2013-04-12 (-20d) |  | 70d → 84d |  |
| 45 | Usability and Other Improvements Requested | 2013-05-03 → 2013-04-15 (-18d) | 2013-06-13 → 2013-05-24 (-20d) |  | 70d → 84d |  |
| 46 | Compliance (EPLC, Section 508) | 2013-06-14 → 2013-05-27 (-18d) | 2013-06-20 → 2013-05-31 (-20d) |  | 70d → 84d |  |
| 47 | MILESTONE: EPLC REVIEW (as needed) | 2013-06-20 → 2013-05-31 (-20d) | 2013-06-20 → 2013-05-31 (-20d) |  | 120d → 134d |  |
| 48 | Appscan on Dev | 2013-06-21 → 2013-06-03 (-18d) | 2013-07-08 → 2013-06-18 (-20d) |  | 108d → 122d |  |
| 49 | Regression Testing on QA tier | 2013-06-21 → 2013-06-03 (-18d) | 2013-07-08 → 2013-06-18 (-20d) |  | 70d → 84d |  |
| 50 | Installer Testing | 2013-07-09 → 2013-06-19 (-20d) | 2013-07-12 → 2013-06-24 (-18d) |  | 102d → 116d |  |
| 51 | Section 508 testing on QA tier | 2013-07-15 → 2013-06-25 (-20d) | 2013-07-16 → 2013-06-26 (-20d) |  | 102d → 116d |  |
| 52 | Appscan on QA tier | 2013-07-09 → 2013-06-19 (-20d) | 2013-07-29 → 2013-07-09 (-20d) |  | 70d → 84d |  |
| 53 | Test Results Review and Reporting | 2013-07-30 → 2013-07-10 (-20d) | 2013-08-01 → 2013-07-12 (-20d) |  | 70d → 84d |  |
| 54 | Deploy to STAGE | 2013-08-02 → 2013-07-15 (-18d) | 2013-08-02 → 2013-07-15 (-18d) |  | 70d → 84d |  |
| 55 | Appscan on STAGE tier | 2013-08-05 → 2013-07-16 (-20d) | 2013-08-23 → 2013-08-05 (-18d) |  | 70d → 84d |  |
| 56 | Regression Testing on STAGE | 2013-08-05 → 2013-07-16 (-20d) | 2013-08-09 → 2013-07-22 (-18d) |  | 80d → 94d |  |
| 57 | Test Results Review and Reporting | 2013-08-26 → 2013-08-06 (-20d) | 2013-08-26 → 2013-08-06 (-20d) |  | 70d → 84d |  |
| 58 | Create release artifacts | 2013-08-05 → 2013-07-16 (-20d) | 2013-08-05 → 2013-07-16 (-20d) |  | 88d → 102d |  |
| 59 | Deploy to PRODUCTION | 2013-08-27 → 2013-08-07 (-20d) | 2013-08-28 → 2013-08-08 (-20d) |  | 70d → 84d |  |
| 60 | Update product landing page | 2013-08-29 → 2013-08-09 (-20d) | 2013-08-29 → 2013-08-09 (-20d) |  | 70.5d → 84.5d |  |
| 61 | QA smoke tests PRODUCTION | 2013-08-29 → 2013-08-09 (-20d) | 2013-08-29 → 2013-08-09 (-20d) |  | 70d → 84d |  |
| 62 | MILESTONE: RELEASE 1.5 | 2013-08-29 → 2013-08-09 (-20d) | 2013-08-29 → 2013-08-09 (-20d) |  | 70d → 84d |  |

## Version 5 (saved 2013-02-12)

Note of the change: Updated Feb 12

Last finish stays 2013-12-05. Complete tasks 8 → 9.

Added:

| ID | Task | Duration | Start | Finish | Predecessors | Resources |
| --- | --- | --- | --- | --- | --- | --- |
| 18 | UCSF Support | 2d | 2013-02-08 | 2013-02-11 | 17 | Abe |
| 20 | 508 Compliance on Prod (100%) | 1d? | 2013-02-22 | 2013-02-22 | 19 | Abe |

Changed:

| ID | Task | Start | Finish | Complete | Total float | Predecessors | Other |
| --- | --- | --- | --- | --- | --- | --- | --- |
| 1 | **caIntegrator** |  |  | 4% → 6% |  |  |  |
| 7 | **caIntegrator 1.4.1** |  |  | 11% → 16% |  |  |  |
| 17 | 508 Compliance on Dev (100%) | 2013-02-05 A | 2013-02-07 A | 0% → 100% | 61.5d → none |  | was named 508 Compliance (100%) |
| 19 | Fix Appscan Issues | 2013-02-08 A |  | 0% → 80% | 61.5d → 60.5d | 17 → 18 |  |
| 21 | Documentation Changes (Context Sensitive links) | 2013-02-22 → 2013-02-25 (+3d) | 2013-02-22 → 2013-02-25 (+3d) |  | 61.5d → 60.5d | 19 → 20 |  |
| 22 | caBIO replacement changes | 2013-02-25 → 2013-02-26 (+1d) | 2013-03-14 → 2013-03-15 (+1d) |  | 97d → 96d |  |  |
| 23 | AntHill Pro setup | 2013-03-15 → 2013-03-18 (+3d) | 2013-03-15 → 2013-03-18 (+3d) |  | 97d → 96d |  |  |
| 24 | Final test and Deployment on Dev (Anthill Pro) | 2013-03-18 → 2013-03-19 (+1d) | 2013-03-21 → 2013-03-22 (+1d) |  | 97d → 96d |  |  |
| 25 | Appscan on Dev | 2013-02-25 → 2013-02-26 (+1d) | 2013-02-28 → 2013-03-01 (+1d) |  | 61.5d → 60.5d |  |  |
| 26 | Regression Testing on QA tier | 2013-03-01 → 2013-03-04 (+3d) | 2013-03-18 → 2013-03-19 (+1d) |  | 61.5d → 60.5d |  |  |
| 27 | Installer Testing | 2013-03-19 → 2013-03-20 (+1d) | 2013-03-22 → 2013-03-25 (+3d) |  | 94d → 93d |  |  |
| 28 | Section 508 testing on QA tier | 2013-03-25 → 2013-03-26 (+1d) | 2013-03-26 → 2013-03-27 (+1d) |  | 94d → 93d |  |  |
| 29 | Appscan on QA tier | 2013-03-19 → 2013-03-20 (+1d) | 2013-04-08 → 2013-04-09 (+1d) |  | 61.5d → 60.5d |  |  |
| 30 | Test Results Review and Reporting | 2013-04-09 → 2013-04-10 (+1d) | 2013-04-09 → 2013-04-10 (+1d) |  | 61.5d → 60.5d |  |  |
| 31 | Deploy to STAGE | 2013-04-10 → 2013-04-11 (+1d) | 2013-04-10 → 2013-04-11 (+1d) |  | 61.5d → 60.5d |  |  |
| 32 | Appscan on STAGE tier | 2013-04-11 → 2013-04-12 (+1d) | 2013-05-01 → 2013-05-02 (+1d) |  | 61.5d → 60.5d |  |  |
| 33 | Regression Testing on STAGE | 2013-04-11 → 2013-04-12 (+1d) | 2013-04-17 → 2013-04-18 (+1d) |  | 71.5d → 70.5d |  |  |
| 34 | Test Results Review and Reporting | 2013-05-02 → 2013-05-03 (+1d) | 2013-05-06 → 2013-05-07 (+1d) |  | 61.5d → 60.5d |  |  |
| 35 | Create release artifacts | 2013-04-11 → 2013-04-12 (+1d) | 2013-04-11 → 2013-04-12 (+1d) |  | 82d → 81d |  |  |
| 36 | Deploy to PRODUCTION | 2013-05-07 → 2013-05-08 (+1d) | 2013-05-08 → 2013-05-09 (+1d) |  | 61.5d → 60.5d |  |  |
| 37 | Update product landing page | 2013-05-09 → 2013-05-10 (+1d) | 2013-05-09 → 2013-05-10 (+1d) |  | 61.5d → 60.5d |  |  |
| 38 | QA smoke tests PRODUCTION | 2013-05-09 → 2013-05-10 (+1d) | 2013-05-10 → 2013-05-13 (+3d) |  | 61.5d → 60.5d |  |  |
| 39 | MILESTONE: RELEASE 1.4.1 | 2013-05-10 → 2013-05-13 (+3d) | 2013-05-10 → 2013-05-13 (+3d) |  | 61.5d → 60.5d |  |  |

## Version 6 (saved 2013-02-26)

Note of the change: Updated with June Release

Last finish stays 2013-12-05. Complete tasks 9 → 11.

Added:

| ID | Task | Duration | Start | Finish | Predecessors | Resources |
| --- | --- | --- | --- | --- | --- | --- |
| 23 | Documentation Changes | 3d | 2013-03-21 | 2013-03-25 | 22 | Jill |
| 24 | Bug fixes and other improvements | 10d | 2013-03-01 | 2013-03-14 | 21 | Abe |

Changed:

| ID | Task | Start | Finish | Duration | Complete | Total float | Predecessors |
| --- | --- | --- | --- | --- | --- | --- | --- |
| 1 | **caIntegrator** |  |  |  | 6% → 7% |  |  |
| 18 | UCSF Support | 2013-02-08 A | 2013-02-11 A |  | 0% → 100% | 66.5d → none |  |
| 19 | Fix Appscan Issues |  | 2013-02-21 A |  | 80% → 100% | 60.5d → none |  |
| 20 | 508 Compliance on Prod (100%) | 2013-02-22 A | 2013-02-22 → 2013-02-26 (+4d) | 1d? → 3d | 0% → 60% | 60.5d → 10d |  |
| 21 | Documentation Changes (Context Sensitive links) | 2013-02-25 → 2013-02-27 (+2d) | 2013-02-25 → 2013-02-28 (+3d) | 1d? → 2d |  | 60.5d → 10d |  |
| 22 | caBIO replacement changes | 2013-02-26 → 2013-03-01 (+3d) | 2013-03-15 → 2013-03-20 (+5d) |  |  | 96d → 95d |  |
| 25 | AntHill Pro setup | 2013-03-18 → 2013-03-15 (-3d) |  | 1d? → 2d |  | 96d → 10d | 22, 21 → 24 |
| 27 | Appscan on Dev | 2013-02-26 → 2013-03-15 (+17d) | 2013-03-01 → 2013-03-20 (+19d) |  |  | 60.5d → 39.5d | 21 → 24 |
| 28 | Regression Testing on QA tier | 2013-03-04 → 2013-03-21 (+17d) | 2013-03-19 → 2013-04-10 (+22d) | 12d → 15d |  | 60.5d → 39.5d |  |
| 29 | Installer Testing | 2013-03-20 → 2013-04-11 (+22d) | 2013-03-25 → 2013-04-16 (+22d) |  |  | 93d → 77d |  |
| 30 | Section 508 testing on QA tier | 2013-03-26 → 2013-04-17 (+22d) | 2013-03-27 → 2013-04-18 (+22d) |  |  | 93d → 77d |  |
| 31 | Appscan on QA tier | 2013-03-20 → 2013-04-11 (+22d) | 2013-04-09 → 2013-05-01 (+22d) |  |  | 60.5d → 39.5d |  |
| 32 | Test Results Review and Reporting | 2013-04-10 → 2013-05-02 (+22d) | 2013-04-10 → 2013-05-06 (+26d) | 1d → 3d |  | 60.5d → 39.5d |  |
| 33 | Deploy to STAGE | 2013-04-11 → 2013-05-07 (+26d) | 2013-04-11 → 2013-05-09 (+28d) | 1d → 3d |  | 60.5d → 39.5d |  |
| 34 | Appscan on STAGE tier | 2013-04-12 → 2013-05-10 (+28d) | 2013-05-02 → 2013-05-30 (+28d) |  |  | 60.5d → 39.5d |  |
| 35 | Regression Testing on STAGE | 2013-04-12 → 2013-05-10 (+28d) | 2013-04-18 → 2013-05-16 (+28d) |  |  | 70.5d → 49.5d |  |
| 36 | Test Results Review and Reporting | 2013-05-03 → 2013-05-31 (+28d) | 2013-05-07 → 2013-06-04 (+28d) |  |  | 60.5d → 39.5d |  |
| 37 | Create release artifacts | 2013-04-12 → 2013-05-10 (+28d) | 2013-04-12 → 2013-05-13 (+31d) | 1d → 2d |  | 81d → 60d |  |
| 38 | Deploy to PRODUCTION | 2013-05-08 → 2013-06-05 (+28d) | 2013-05-09 → 2013-06-07 (+29d) | 2d → 3d |  | 60.5d → 39.5d |  |
| 39 | Update product landing page | 2013-05-10 → 2013-06-10 (+31d) | 2013-05-10 → 2013-06-10 (+31d) |  |  | 60.5d → 39.5d |  |
| 40 | QA smoke tests PRODUCTION | 2013-05-10 → 2013-06-10 (+31d) | 2013-05-13 → 2013-06-11 (+29d) |  |  | 60.5d → 39.5d |  |
| 41 | MILESTONE: RELEASE 1.4.1 | 2013-05-13 → 2013-06-11 (+29d) | 2013-05-13 → 2013-06-11 (+29d) |  |  | 60.5d → 39.5d |  |
| 43 | **caIntegrator 1.5** | 2012-12-03 → 2013-03-25 (+112d) |  | 264d → 184d |  |  |  |
| 44 | Tech Stack Upgrades - Spring | 2012-12-03 → 2013-03-25 (+112d) | 2012-12-28 → 2013-04-19 (+112d) |  |  | 90d → 10d | none → 26 |
| 45 | Bug Fixes and Improvements | 2012-12-31 → 2013-04-22 (+112d) | 2013-02-11 → 2013-05-24 (+102d) |  |  | 84d → 10d |  |
| 46 | CSM/UPT upgrade changes | 2013-02-12 → 2013-05-27 (+104d) | 2013-02-15 → 2013-05-30 (+104d) |  |  | 84d → 10d |  |
| 47 | Support for release 1.4.1 | 2013-02-18 → 2013-05-31 (+102d) | 2013-03-01 → 2013-06-13 (+104d) |  |  | 84d → 10d |  |
| 48 | Performance Improvements | 2013-03-04 → 2013-06-14 (+102d) | 2013-04-12 → 2013-07-25 (+104d) |  |  | 84d → 10d |  |
| 49 | Usability and Other Improvements Requested | 2013-04-15 → 2013-07-26 (+102d) | 2013-05-24 → 2013-09-05 (+104d) |  |  | 84d → 10d |  |
| 50 | Compliance (EPLC, Section 508) | 2013-05-27 → 2013-09-06 (+102d) | 2013-05-31 → 2013-09-12 (+104d) |  |  | 84d → 10d |  |
| 51 | MILESTONE: EPLC REVIEW (as needed) | 2013-05-31 → 2013-09-12 (+104d) | 2013-05-31 → 2013-09-12 (+104d) |  |  | 134d → 60d |  |
| 52 | Appscan on Dev | 2013-06-03 → 2013-09-13 (+102d) | 2013-06-18 → 2013-09-30 (+104d) |  |  | 122d → 48d |  |
| 53 | Regression Testing on QA tier | 2013-06-03 → 2013-09-13 (+102d) | 2013-06-18 → 2013-09-30 (+104d) |  |  | 84d → 10d |  |
| 54 | Installer Testing | 2013-06-19 → 2013-10-01 (+104d) | 2013-06-24 → 2013-10-04 (+102d) |  |  | 116d → 42d |  |
| 55 | Section 508 testing on QA tier | 2013-06-25 → 2013-10-07 (+104d) | 2013-06-26 → 2013-10-08 (+104d) |  |  | 116d → 42d |  |
| 56 | Appscan on QA tier | 2013-06-19 → 2013-10-01 (+104d) | 2013-07-09 → 2013-10-21 (+104d) |  |  | 84d → 10d |  |
| 57 | Test Results Review and Reporting | 2013-07-10 → 2013-10-22 (+104d) | 2013-07-12 → 2013-10-24 (+104d) |  |  | 84d → 10d |  |
| 58 | Deploy to STAGE | 2013-07-15 → 2013-10-25 (+102d) | 2013-07-15 → 2013-10-25 (+102d) |  |  | 84d → 10d |  |
| 59 | Appscan on STAGE tier | 2013-07-16 → 2013-10-28 (+104d) | 2013-08-05 → 2013-11-15 (+102d) |  |  | 84d → 10d |  |
| 60 | Regression Testing on STAGE | 2013-07-16 → 2013-10-28 (+104d) | 2013-07-22 → 2013-11-01 (+102d) |  |  | 94d → 20d |  |
| 61 | Test Results Review and Reporting | 2013-08-06 → 2013-11-18 (+104d) | 2013-08-06 → 2013-11-18 (+104d) |  |  | 84d → 10d |  |
| 62 | Create release artifacts | 2013-07-16 → 2013-10-28 (+104d) | 2013-07-16 → 2013-10-28 (+104d) |  |  | 102d → 28d |  |
| 63 | Deploy to PRODUCTION | 2013-08-07 → 2013-11-19 (+104d) | 2013-08-08 → 2013-11-20 (+104d) |  |  | 84d → 10d |  |
| 64 | Update product landing page | 2013-08-09 → 2013-11-21 (+104d) | 2013-08-09 → 2013-11-21 (+104d) |  |  | 84.5d → 10.5d |  |
| 65 | QA smoke tests PRODUCTION | 2013-08-09 → 2013-11-21 (+104d) | 2013-08-09 → 2013-11-21 (+104d) |  |  | 84d → 10d |  |
| 66 | MILESTONE: RELEASE 1.5 | 2013-08-09 → 2013-11-21 (+104d) | 2013-08-09 → 2013-11-21 (+104d) |  |  | 84d → 10d |  |

## Version 7 (saved 2013-03-05)

Note of the change: updated as of March 5

Last finish 2013-12-05 → 2013-12-09 (+4d). Complete tasks 11 → 12.

Added:

| ID | Task | Duration | Start | Finish | Predecessors | Resources |
| --- | --- | --- | --- | --- | --- | --- |
| 20 | 508 compliance work | 4d | 2013-02-22 A | 2013-02-27 A | 19 | Abe |
| 26 | 508 Compliance Test | 3d | 2013-02-22 A | 2013-04-03 | 25 | Abe |

Removed: 20 508 Compliance on Prod (100%)

Changed:

| ID | Task | Start | Finish | Duration | Complete | Total float | Predecessors |
| --- | --- | --- | --- | --- | --- | --- | --- |
| 1 | **caIntegrator** |  | 2013-12-05 → 2013-12-09 (+4d) | 264d? → 265.2d? | 7% → 8% |  |  |
| 7 | **caIntegrator 1.4.1** |  | 2013-06-11 → 2013-06-25 (+14d) | 134d? → 143.5d? | 16% → 18% | 39d → 30.7d |  |
| 21 | caBIO replacement changes | 2013-03-01 → 2013-02-28 (-1d) | 2013-03-20 → 2013-03-19 (-1d) |  |  | 95d → 0d | 22 → 20 |
| 22 | Documentation Changes (Context Sensitive links) | 2013-02-27 → 2013-03-20 (+21d) | 2013-02-28 → 2013-03-21 (+21d) |  |  | 10d → 0d | 508 Compliance on Prod (100%) → 21 |
| 23 | Documentation Changes | 2013-03-21 → 2013-03-20 (-1d) | 2013-03-25 → 2013-03-22 (-3d) |  |  | 95d → 97.2d |  |
| 24 | Bug fixes and other improvements | 2013-03-01 → 2013-03-22 (+21d) | 2013-03-14 → 2013-03-28 (+14d) | 10d → 5d |  | 10d → 0d |  |
| 25 | AntHill Pro setup | 2013-03-15 → 2013-03-29 (+14d) | 2013-03-18 → 2013-04-01 (+14d) |  |  | 10d → 0d |  |
| 27 | Final test and Deployment on Dev (Anthill Pro) | 2013-03-19 → 2013-04-03 (+15d) | 2013-03-22 → 2013-04-09 (+18d) |  |  | 10d → 0d | 25 → 26 |
| 28 | Appscan on Dev | 2013-03-15 → 2013-03-29 (+14d) | 2013-03-20 → 2013-04-03 (+14d) |  |  | 39.5d → 30.7d |  |
| 29 | Regression Testing on QA tier | 2013-03-21 → 2013-04-04 (+14d) | 2013-04-10 → 2013-04-24 (+14d) |  |  | 39.5d → 30.7d |  |
| 30 | Installer Testing | 2013-04-11 → 2013-04-25 (+14d) | 2013-04-16 → 2013-04-30 (+14d) |  |  | 77d → 68.2d |  |
| 31 | Section 508 testing on QA tier | 2013-04-17 → 2013-05-01 (+14d) | 2013-04-18 → 2013-05-02 (+14d) |  |  | 77d → 68.2d |  |
| 32 | Appscan on QA tier | 2013-04-11 → 2013-04-25 (+14d) | 2013-05-01 → 2013-05-15 (+14d) |  |  | 39.5d → 30.7d |  |
| 33 | Test Results Review and Reporting | 2013-05-02 → 2013-05-16 (+14d) | 2013-05-06 → 2013-05-20 (+14d) |  |  | 39.5d → 30.7d |  |
| 34 | Deploy to STAGE | 2013-05-07 → 2013-05-21 (+14d) | 2013-05-09 → 2013-05-23 (+14d) |  |  | 39.5d → 30.7d |  |
| 35 | Appscan on STAGE tier | 2013-05-10 → 2013-05-24 (+14d) | 2013-05-30 → 2013-06-13 (+14d) |  |  | 39.5d → 30.7d |  |
| 36 | Regression Testing on STAGE | 2013-05-10 → 2013-05-24 (+14d) | 2013-05-16 → 2013-05-30 (+14d) |  |  | 49.5d → 40.7d |  |
| 37 | Test Results Review and Reporting | 2013-05-31 → 2013-06-14 (+14d) | 2013-06-04 → 2013-06-18 (+14d) |  |  | 39.5d → 30.7d |  |
| 38 | Create release artifacts | 2013-05-10 → 2013-05-24 (+14d) | 2013-05-13 → 2013-05-27 (+14d) |  |  | 60d → 51.2d |  |
| 39 | Deploy to PRODUCTION | 2013-06-05 → 2013-06-19 (+14d) | 2013-06-07 → 2013-06-21 (+14d) |  |  | 39.5d → 30.7d |  |
| 40 | Update product landing page | 2013-06-10 → 2013-06-24 (+14d) | 2013-06-10 → 2013-06-24 (+14d) |  |  | 39.5d → 30.7d |  |
| 41 | QA smoke tests PRODUCTION | 2013-06-10 → 2013-06-24 (+14d) | 2013-06-11 → 2013-06-25 (+14d) |  |  | 39.5d → 30.7d |  |
| 42 | MILESTONE: RELEASE 1.4.1 | 2013-06-11 → 2013-06-25 (+14d) | 2013-06-11 → 2013-06-25 (+14d) |  |  | 39.5d → 30.7d |  |
| 44 | **caIntegrator 1.5** | 2013-03-25 → 2013-04-09 (+15d) | 2013-12-05 → 2013-12-09 (+4d) | 184d → 174d |  |  |  |
| 45 | Tech Stack Upgrades - Spring | 2013-03-25 → 2013-04-09 (+15d) | 2013-04-19 → 2013-05-07 (+18d) |  |  | 10d → 0d |  |
| 46 | Bug Fixes and Improvements | 2013-04-22 → 2013-05-07 (+15d) | 2013-05-24 → 2013-06-11 (+18d) |  |  | 10d → 0d |  |
| 47 | CSM/UPT upgrade changes | 2013-05-27 → 2013-06-11 (+15d) | 2013-05-30 → 2013-06-17 (+18d) |  |  | 10d → 0d |  |
| 48 | Support for release 1.4.1 | 2013-05-31 → 2013-06-17 (+17d) | 2013-06-13 → 2013-07-01 (+18d) |  |  | 10d → 0d |  |
| 49 | Performance Improvements | 2013-06-14 → 2013-07-01 (+17d) | 2013-07-25 → 2013-08-12 (+18d) |  |  | 10d → 0d |  |
| 50 | Usability and Other Improvements Requested | 2013-07-26 → 2013-08-12 (+17d) | 2013-09-05 → 2013-09-23 (+18d) |  |  | 10d → 0d |  |
| 51 | Compliance (EPLC, Section 508) | 2013-09-06 → 2013-09-23 (+17d) | 2013-09-12 → 2013-09-30 (+18d) |  |  | 10d → 0d |  |
| 52 | MILESTONE: EPLC REVIEW (as needed) | 2013-09-12 → 2013-09-30 (+18d) | 2013-09-12 → 2013-09-30 (+18d) |  |  | 60d → 50d |  |
| 53 | Appscan on Dev | 2013-09-13 → 2013-09-30 (+17d) | 2013-09-30 → 2013-10-16 (+16d) |  |  | 48d → 38d |  |
| 54 | Regression Testing on QA tier | 2013-09-13 → 2013-09-30 (+17d) | 2013-09-30 → 2013-10-16 (+16d) |  |  | 10d → 0d |  |
| 55 | Installer Testing | 2013-10-01 → 2013-10-16 (+15d) | 2013-10-04 → 2013-10-22 (+18d) |  |  | 42d → 32d |  |
| 56 | Section 508 testing on QA tier | 2013-10-07 → 2013-10-22 (+15d) | 2013-10-08 → 2013-10-24 (+16d) |  |  | 42d → 32d |  |
| 57 | Appscan on QA tier | 2013-10-01 → 2013-10-16 (+15d) | 2013-10-21 → 2013-11-06 (+16d) |  |  | 10d → 0d |  |
| 58 | Test Results Review and Reporting | 2013-10-22 → 2013-11-06 (+15d) | 2013-10-24 → 2013-11-11 (+18d) |  |  | 10d → 0d |  |
| 59 | Deploy to STAGE | 2013-10-25 → 2013-11-11 (+17d) | 2013-10-25 → 2013-11-12 (+18d) |  |  | 10d → 0d |  |
| 60 | Appscan on STAGE tier | 2013-10-28 → 2013-11-12 (+15d) | 2013-11-15 → 2013-12-03 (+18d) |  |  | 10d → 0d |  |
| 61 | Regression Testing on STAGE | 2013-10-28 → 2013-11-12 (+15d) | 2013-11-01 → 2013-11-19 (+18d) |  |  | 20d → 10d |  |
| 62 | Test Results Review and Reporting | 2013-11-18 → 2013-12-03 (+15d) | 2013-11-18 → 2013-12-04 (+16d) |  |  | 10d → 0d |  |
| 63 | Create release artifacts | 2013-10-28 → 2013-11-12 (+15d) | 2013-10-28 → 2013-11-13 (+16d) |  |  | 28d → 18d |  |
| 64 | Deploy to PRODUCTION | 2013-11-19 → 2013-12-04 (+15d) | 2013-11-20 → 2013-12-06 (+16d) |  |  | 10d → 0d |  |
| 65 | Update product landing page | 2013-11-21 → 2013-12-06 (+15d) | 2013-11-21 → 2013-12-06 (+15d) |  |  | 10.5d → 0.5d |  |
| 66 | QA smoke tests PRODUCTION | 2013-11-21 → 2013-12-06 (+15d) | 2013-11-21 → 2013-12-09 (+18d) |  |  | 10d → 0d |  |
| 67 | MILESTONE: RELEASE 1.5 | 2013-11-21 → 2013-12-09 (+18d) | 2013-11-21 → 2013-12-09 (+18d) |  |  | 10d → 0d |  |

## Version 8 (saved 2013-03-21)

Note of the change: mod

Last finish 2013-12-09 → 2013-12-05 (-4d).

Changed:

| ID | Task | Start | Finish | Duration | Total float |
| --- | --- | --- | --- | --- | --- |
| 1 | **caIntegrator** |  | 2013-12-09 → 2013-12-05 (-4d) | 265.2d? → 264d? |  |
| 44 | **caIntegrator 1.5** |  | 2013-12-09 → 2013-12-05 (-4d) | 174d → 172.8d |  |
| 46 | Bug Fixes and Improvements |  | 2013-06-11 → 2013-05-28 (-14d) | 25d → 15d | 0d → 13.8d |
| 47 | CSM/UPT upgrade changes | 2013-06-11 → 2013-05-28 (-14d) | 2013-06-17 → 2013-06-03 (-14d) |  | 0d → 13.8d |
| 48 | Support for release 1.4.1 | 2013-06-17 → 2013-06-03 (-14d) | 2013-07-01 → 2013-06-17 (-14d) |  | 0d → 13.8d |
| 49 | Performance Improvements | 2013-07-01 → 2013-06-17 (-14d) | 2013-08-12 → 2013-07-22 (-21d) | 30d → 25d | 0d → 13.8d |
| 50 | Usability and Other Improvements Requested | 2013-08-12 → 2013-07-22 (-21d) | 2013-09-23 → 2013-09-02 (-21d) |  | 0d → 13.8d |
| 51 | Compliance (EPLC, Section 508) | 2013-09-23 → 2013-09-02 (-21d) | 2013-09-30 → 2013-09-09 (-21d) |  | 0d → 13.8d |
| 52 | MILESTONE: EPLC REVIEW (as needed) | 2013-09-30 → 2013-09-09 (-21d) | 2013-09-30 → 2013-09-09 (-21d) |  | 50d → 63.8d |
| 53 | Appscan on Dev | 2013-09-30 → 2013-09-09 (-21d) | 2013-10-16 → 2013-09-25 (-21d) |  | 38d → 51.8d |
| 54 | Regression Testing on QA tier | 2013-09-30 → 2013-09-09 (-21d) | 2013-10-16 → 2013-09-25 (-21d) |  | 0d → 13.8d |
| 55 | Installer Testing | 2013-10-16 → 2013-09-25 (-21d) | 2013-10-22 → 2013-10-01 (-21d) |  | 32d → 45.8d |
| 56 | Section 508 testing on QA tier | 2013-10-22 → 2013-10-01 (-21d) | 2013-10-24 → 2013-10-03 (-21d) |  | 32d → 45.8d |
| 57 | Appscan on QA tier | 2013-10-16 → 2013-09-25 (-21d) | 2013-11-06 → 2013-10-16 (-21d) |  | 0d → 13.8d |
| 58 | Test Results Review and Reporting | 2013-11-06 → 2013-10-16 (-21d) | 2013-11-11 → 2013-10-21 (-21d) |  | 0d → 13.8d |
| 59 | Deploy to STAGE | 2013-11-11 → 2013-10-21 (-21d) | 2013-11-12 → 2013-10-22 (-21d) |  | 0d → 13.8d |
| 60 | Appscan on STAGE tier | 2013-11-12 → 2013-10-22 (-21d) | 2013-12-03 → 2013-11-12 (-21d) |  | 0d → 13.8d |
| 61 | Regression Testing on STAGE | 2013-11-12 → 2013-10-22 (-21d) | 2013-11-19 → 2013-10-29 (-21d) |  | 10d → 23.8d |
| 62 | Test Results Review and Reporting | 2013-12-03 → 2013-11-12 (-21d) | 2013-12-04 → 2013-11-13 (-21d) |  | 0d → 13.8d |
| 63 | Create release artifacts | 2013-11-12 → 2013-10-22 (-21d) | 2013-11-13 → 2013-10-23 (-21d) |  | 18d → 31.8d |
| 64 | Deploy to PRODUCTION | 2013-12-04 → 2013-11-13 (-21d) | 2013-12-06 → 2013-11-15 (-21d) |  | 0d → 13.8d |
| 65 | Update product landing page | 2013-12-06 → 2013-11-15 (-21d) | 2013-12-06 → 2013-11-15 (-21d) |  | 0.5d → 14.3d |
| 66 | QA smoke tests PRODUCTION | 2013-12-06 → 2013-11-15 (-21d) | 2013-12-09 → 2013-11-18 (-21d) |  | 0d → 13.8d |
| 67 | MILESTONE: RELEASE 1.5 | 2013-12-09 → 2013-11-18 (-21d) | 2013-12-09 → 2013-11-18 (-21d) |  | 0d → 13.8d |

## Version 9 (saved 2013-04-23)

Note of the change: Modified

Last finish stays 2013-12-05. Complete tasks 12 → 20.

Added:

| ID | Task | Duration | Start | Finish | Predecessors | Resources |
| --- | --- | --- | --- | --- | --- | --- |
| 23 | caBIO changes - for pathway search | 5d | 2013-04-01 A | 2013-04-05 A | 22 | Abe |
| 29 | Tag for QA | 2d | 2013-04-23 | 2013-04-24 | 28 | Abe |
| 31 | Wait for QA Team Availability | 10d | 2013-04-30 | 2013-05-13 | 30 |  |
| 48 | Support for 1.4.1 | 5d | 2013-04-25 | 2013-05-01 | 29 | Abe |

Changed:

| ID | Task | Start | Finish | Duration | Complete | Total float | Predecessors |
| --- | --- | --- | --- | --- | --- | --- | --- |
| 1 | **caIntegrator** |  |  |  | 8% → 17% |  |  |
| 7 | **caIntegrator 1.4.1** |  | 2013-06-25 → 2013-08-02 (+38d) | 143.5d? → 171.5d? | 18% → 35% | 29.5d → 1.5d |  |
| 21 | caBIO replacement changes | 2013-02-28 A | 2013-03-19 → 2013-03-27 A (+8d) | 14d → 20d | 0% → 100% | 13.8d → none |  |
| 22 | Documentation Changes (Context Sensitive links) | 2013-03-20 → 2013-03-28 A (+8d) | 2013-03-21 → 2013-03-29 A (+8d) |  | 0% → 100% | 13.8d → none |  |
| 24 | Bug fixes and other improvements | 2013-03-22 → 2013-04-01 A (+10d) | 2013-03-28 → 2013-04-12 A (+15d) | 5d → 10d | 0% → 100% | 13.8d → none | 22 → 23 |
| 25 | AntHill Pro setup | 2013-03-29 → 2013-04-15 A (+17d) | 2013-04-01 → 2013-04-16 A (+15d) |  | 0% → 100% | 13.8d → none |  |
| 26 | 508 Compliance Test |  | 2013-04-03 → 2013-04-17 A (+14d) | 3d → 4d | 60% → 100% | 13.8d → none |  |
| 27 | Final test and Deployment on Dev (Anthill Pro) | 2013-04-03 A | 2013-04-09 A |  | 0% → 100% | 13.8d → none |  |
| 28 | Appscan on Dev | 2013-03-29 → 2013-04-15 A (+17d) | 2013-04-03 → 2013-04-22 A (+19d) | 4d → 6d | 0% → 100% | 30.7d → none |  |
| 30 | Documentation Changes | 2013-03-20 → 2013-04-25 (+36d) | 2013-03-22 → 2013-04-29 (+38d) |  |  | 97.2d → 1.5d | 21 → 29 |
| 32 | Regression Testing on QA tier | 2013-04-04 → 2013-05-14 (+40d) | 2013-04-24 → 2013-06-03 (+40d) |  |  | 30.7d → 1.5d | 28 → 31 |
| 33 | Installer Testing | 2013-04-25 → 2013-06-04 (+40d) | 2013-04-30 → 2013-06-07 (+38d) |  |  | 68.2d → 39d |  |
| 34 | Section 508 testing on QA tier | 2013-05-01 → 2013-06-10 (+40d) | 2013-05-02 → 2013-06-11 (+40d) |  |  | 68.2d → 39d |  |
| 35 | Appscan on QA tier | 2013-04-25 → 2013-06-04 (+40d) | 2013-05-15 → 2013-06-24 (+40d) |  |  | 30.7d → 1.5d |  |
| 36 | Test Results Review and Reporting | 2013-05-16 → 2013-06-25 (+40d) | 2013-05-20 → 2013-06-27 (+38d) |  |  | 30.7d → 1.5d |  |
| 37 | Deploy to STAGE | 2013-05-21 → 2013-06-28 (+38d) | 2013-05-23 → 2013-07-02 (+40d) |  |  | 30.7d → 1.5d |  |
| 38 | Appscan on STAGE tier | 2013-05-24 → 2013-07-03 (+40d) | 2013-06-13 → 2013-07-23 (+40d) |  |  | 30.7d → 1.5d |  |
| 39 | Regression Testing on STAGE | 2013-05-24 → 2013-07-03 (+40d) | 2013-05-30 → 2013-07-09 (+40d) |  |  | 40.7d → 11.5d |  |
| 40 | Test Results Review and Reporting | 2013-06-14 → 2013-07-24 (+40d) | 2013-06-18 → 2013-07-26 (+38d) |  |  | 30.7d → 1.5d |  |
| 41 | Create release artifacts | 2013-05-24 → 2013-07-03 (+40d) | 2013-05-27 → 2013-07-04 (+38d) |  |  | 51.2d → 22d |  |
| 42 | Deploy to PRODUCTION | 2013-06-19 → 2013-07-29 (+40d) | 2013-06-21 → 2013-07-31 (+40d) |  |  | 30.7d → 1.5d |  |
| 43 | Update product landing page | 2013-06-24 → 2013-08-01 (+38d) | 2013-06-24 → 2013-08-01 (+38d) |  |  | 30.7d → 1.5d |  |
| 44 | QA smoke tests PRODUCTION | 2013-06-24 → 2013-08-01 (+38d) | 2013-06-25 → 2013-08-02 (+38d) |  |  | 30.7d → 1.5d |  |
| 45 | MILESTONE: RELEASE 1.4.1 | 2013-06-25 → 2013-08-02 (+38d) | 2013-06-25 → 2013-08-02 (+38d) |  |  | 30.7d → 1.5d |  |
| 47 | **caIntegrator 1.5** | 2013-04-09 → 2013-04-25 (+16d) |  | 172.8d → 161d |  |  |  |
| 49 | Tech Stack Upgrades - Spring | 2013-04-09 → 2013-05-02 (+23d) | 2013-05-07 → 2013-05-29 (+22d) |  |  | 13.8d → 7d | 27 → 48 |
| 50 | Bug Fixes and Improvements | 2013-05-07 → 2013-05-30 (+23d) | 2013-05-28 → 2013-06-19 (+22d) |  |  | 13.8d → 7d |  |
| 51 | CSM/UPT upgrade changes | 2013-05-28 → 2013-06-20 (+23d) | 2013-06-03 → 2013-06-25 (+22d) |  |  | 13.8d → 7d |  |
| 52 | Support for release 1.4.1 | 2013-06-03 → 2013-06-26 (+23d) | 2013-06-17 → 2013-07-09 (+22d) |  |  | 13.8d → 7d |  |
| 53 | Performance Improvements | 2013-06-17 → 2013-07-10 (+23d) | 2013-07-22 → 2013-08-13 (+22d) |  |  | 13.8d → 7d |  |
| 54 | Usability and Other Improvements Requested | 2013-07-22 → 2013-08-14 (+23d) | 2013-09-02 → 2013-09-10 (+8d) | 30d → 20d |  | 13.8d → 7d |  |
| 55 | Compliance (EPLC, Section 508) | 2013-09-02 → 2013-09-11 (+9d) | 2013-09-09 → 2013-09-17 (+8d) |  |  | 13.8d → 7d |  |
| 56 | MILESTONE: EPLC REVIEW (as needed) | 2013-09-09 → 2013-09-17 (+8d) | 2013-09-09 → 2013-09-17 (+8d) |  |  | 63.8d → 57d |  |
| 57 | Appscan on Dev | 2013-09-09 → 2013-09-18 (+9d) | 2013-09-25 → 2013-10-03 (+8d) |  |  | 51.8d → 45d |  |
| 58 | Regression Testing on QA tier | 2013-09-09 → 2013-09-18 (+9d) | 2013-09-25 → 2013-10-03 (+8d) |  |  | 13.8d → 7d |  |
| 59 | Installer Testing | 2013-09-25 → 2013-10-04 (+9d) | 2013-10-01 → 2013-10-09 (+8d) |  |  | 45.8d → 39d |  |
| 60 | Section 508 testing on QA tier | 2013-10-01 → 2013-10-10 (+9d) | 2013-10-03 → 2013-10-11 (+8d) |  |  | 45.8d → 39d |  |
| 61 | Appscan on QA tier | 2013-09-25 → 2013-10-04 (+9d) | 2013-10-16 → 2013-10-24 (+8d) |  |  | 13.8d → 7d |  |
| 62 | Test Results Review and Reporting | 2013-10-16 → 2013-10-25 (+9d) | 2013-10-21 → 2013-10-29 (+8d) |  |  | 13.8d → 7d |  |
| 63 | Deploy to STAGE | 2013-10-21 → 2013-10-30 (+9d) | 2013-10-22 → 2013-10-30 (+8d) |  |  | 13.8d → 7d |  |
| 64 | Appscan on STAGE tier | 2013-10-22 → 2013-10-31 (+9d) | 2013-11-12 → 2013-11-20 (+8d) |  |  | 13.8d → 7d |  |
| 65 | Regression Testing on STAGE | 2013-10-22 → 2013-10-31 (+9d) | 2013-10-29 → 2013-11-06 (+8d) |  |  | 23.8d → 17d |  |
| 66 | Test Results Review and Reporting | 2013-11-12 → 2013-11-21 (+9d) | 2013-11-13 → 2013-11-21 (+8d) |  |  | 13.8d → 7d |  |
| 67 | Create release artifacts | 2013-10-22 → 2013-10-31 (+9d) | 2013-10-23 → 2013-10-31 (+8d) |  |  | 31.8d → 25d |  |
| 68 | Deploy to PRODUCTION | 2013-11-13 → 2013-11-22 (+9d) | 2013-11-15 → 2013-11-25 (+10d) |  |  | 13.8d → 7d |  |
| 69 | Update product landing page | 2013-11-15 → 2013-11-26 (+11d) | 2013-11-15 → 2013-11-26 (+11d) |  |  | 14.3d → 7.5d |  |
| 70 | QA smoke tests PRODUCTION | 2013-11-15 → 2013-11-26 (+11d) | 2013-11-18 → 2013-11-26 (+8d) |  |  | 13.8d → 7d |  |
| 71 | MILESTONE: RELEASE 1.5 | 2013-11-18 → 2013-11-26 (+8d) | 2013-11-18 → 2013-11-26 (+8d) |  |  | 13.8d → 7d |  |

## Version 10 (saved 2013-06-11)

Note of the change: Added the "Work" column to the MS Project schedule

Last finish stays 2013-12-05. Complete tasks 20 → 23.

Changed:

| ID | Task | Start | Finish | Duration | Complete | Total float | Predecessors |
| --- | --- | --- | --- | --- | --- | --- | --- |
| 1 | **caIntegrator** |  |  |  | 17% → 20% |  |  |
| 7 | **caIntegrator 1.4.1** |  | 2013-08-02 → 2013-07-25 (-8d) | 171.5d? → 165.5d? | 35% → 43% | 1.5d → 7.5d |  |
| 29 | Tag for QA | 2013-04-23 A | 2013-04-24 A |  | 0% → 100% | 1.5d → none |  |
| 30 | Documentation Changes | 2013-04-25 A | 2013-04-29 A |  | 0% → 100% | 1.5d → none |  |
| 31 | Wait for QA Team Availability | 2013-04-30 A | 2013-05-13 A |  | 0% → 100% | 1.5d → none |  |
| 32 | Regression Testing on QA tier |  | 2013-06-03 → 2013-06-10 (+7d) | 15d → 20d |  | 1.5d → 7.5d |  |
| 33 | Installer Testing | 2013-06-04 → 2013-06-11 (+7d) | 2013-06-07 → 2013-06-14 (+7d) |  |  | 39d → 7.5d |  |
| 34 | Section 508 testing on QA tier | 2013-06-10 → 2013-06-17 (+7d) | 2013-06-11 → 2013-06-18 (+7d) |  |  | 39d → 34d |  |
| 35 | Appscan on QA tier | 2013-06-04 → 2013-06-17 (+13d) | 2013-06-24 → 2013-06-21 (-3d) | 15d → 5d |  | 1.5d → 7.5d | 32 → 33 |
| 36 | Test Results Review and Reporting | 2013-06-25 → 2013-06-24 (-1d) | 2013-06-27 → 2013-06-26 (-1d) |  |  | 1.5d → 7.5d |  |
| 37 | Deploy to STAGE | 2013-06-28 → 2013-06-27 (-1d) | 2013-07-02 → 2013-07-01 (-1d) |  |  | 1.5d → 7.5d |  |
| 38 | Appscan on STAGE tier | 2013-07-03 → 2013-07-02 (-1d) | 2013-07-23 → 2013-07-15 (-8d) | 15d → 10d |  | 1.5d → 7.5d |  |
| 39 | Regression Testing on STAGE | 2013-07-03 → 2013-07-02 (-1d) | 2013-07-09 → 2013-07-08 (-1d) |  |  | 11.5d → 12.5d |  |
| 40 | Test Results Review and Reporting | 2013-07-24 → 2013-07-16 (-8d) | 2013-07-26 → 2013-07-18 (-8d) |  |  | 1.5d → 7.5d |  |
| 41 | Create release artifacts | 2013-07-03 → 2013-07-02 (-1d) | 2013-07-04 → 2013-07-03 (-1d) |  |  | 22d → 23d |  |
| 42 | Deploy to PRODUCTION | 2013-07-29 → 2013-07-19 (-10d) | 2013-07-31 → 2013-07-23 (-8d) |  |  | 1.5d → 7.5d |  |
| 43 | Update product landing page | 2013-08-01 → 2013-07-24 (-8d) | 2013-08-01 → 2013-07-24 (-8d) |  |  | 1.5d → 7.5d |  |
| 44 | QA smoke tests PRODUCTION | 2013-08-01 → 2013-07-24 (-8d) | 2013-08-02 → 2013-07-25 (-8d) |  |  | 1.5d → 7.5d |  |
| 45 | MILESTONE: RELEASE 1.4.1 | 2013-08-02 → 2013-07-25 (-8d) | 2013-08-02 → 2013-07-25 (-8d) |  |  | 1.5d → 7.5d |  |

## Version 11 (saved 2013-07-22)

Note of the change: Schedule updates to account for Struts Patch and new Deployment SOP

Last finish 2013-12-05 → 2014-01-24 (+50d). Complete tasks 23 → 29.

Added:

| ID | Task | Duration | Start | Finish | Predecessors | Constraint | Resources |
| --- | --- | --- | --- | --- | --- | --- | --- |
| 32 | **QA Tier** | 72d? | 2013-05-14 A | 2013-08-21 | 31 |  |  |
| 37 | **Struts patch** | 22d? | 2013-07-18 A | 2013-08-16 | 36 |  |  |
| 38 | Upgrade to Struts 2.3.15.1 and fix anything that breaks | 2d | 2013-07-18 A | 2013-07-19 A |  | start no earlier than 2013-07-18 | Abe |
| 39 | Obtain permission to deploy to QA Tier | 0d | 2013-07-19 A | 2013-07-19 A | 38 |  | Mike |
| 40 | Deploy to the QA Tier | 1d? | 2013-07-22 | 2013-07-22 | 39 |  | Marina |
| 41 | Smoke test | 3d | 2013-07-23 | 2013-07-25 | 40 |  | Marina |
| 42 | Run Section 508 scan and manage issues | 1d? | 2013-07-26 | 2013-07-26 | 41 |  | Mike |
| 43 | Run security appscan | 5d | 2013-07-26 | 2013-08-01 | 41 |  | Systems |
| 44 | Regression test | 15d | 2013-07-26 | 2013-08-15 | 41 |  | Marina |
| 45 | Test local install | 4d | 2013-07-23 | 2013-07-26 | 40 |  | Marina |
| 46 | Test local upgrade | 5d | 2013-07-23 | 2013-07-29 | 40 |  | Marina |
| 47 | Update test report | 1d? | 2013-08-16 | 2013-08-16 | 41, 42, 43, 44, 45, 46 |  | Marina |
| 48 | Request approval to deploy to STAGE | 0d | 2013-08-16 | 2013-08-16 | 37 |  | Marina |
| 50 | Approval to deploy to STAGE | 0d | 2013-08-16 | 2013-08-16 | 47 |  | QA* |
| 52 | **STAGE Tier** | 22d | 2013-08-16 | 2013-09-17 |  |  |  |
| 53 | Request deployment to STAGE | 0d | 2013-08-16 | 2013-08-16 | 50 |  | Marina; Mike |
| 55 | Smoke test | 3d | 2013-08-22 | 2013-08-26 | 54 |  | Marina |
| 56 | Request security appscan | 0d | 2013-08-26 | 2013-08-26 | 55 |  | Marina; Mike |
| 58 | Create QA Test Summary Report | 3d | 2013-09-10 | 2013-09-12 | 57 |  | Marina |
| 59 | Request approval to deploy to PROD | 0d | 2013-09-12 | 2013-09-12 | 58 |  | Marina |
| 61 | Approval to deploy to PROD | 0d | 2013-09-17 | 2013-09-17 | 60 |  | GQR |
| 62 | **PRODUCTION** | 5d? | 2013-09-18 | 2013-09-24 |  |  |  |
| 63 | Request deployment to PRODUCTION | 1d? | 2013-09-18 | 2013-09-18 | 61 |  | GQR |
| 71 | **Development** | 235d | 2012-12-03 | 2013-10-25 |  |  |  |
| 72 | **Improve performance** | 89d | 2013-04-25 | 2013-08-27 |  |  |  |
| 73 | Development | 79d | 2013-04-25 | 2013-08-13 | 29 |  | Abe |
| 74 | QA | 10d | 2013-08-14 | 2013-08-27 | 73 |  | Marina |
| 76 | **Upgrade Spring** | 30d | 2013-07-03 | 2013-08-13 |  |  |  |
| 77 | Development | 20d | 2013-07-03 | 2013-07-30 |  | start no earlier than 2013-07-03 | Abe |
| 78 | QA | 10d | 2013-07-31 | 2013-08-13 | 77 |  | Marina |
| 79 | **Upgrade NCI Tech Stack** | 30d | 2013-08-14 | 2013-09-24 |  |  |  |
| 80 | Development | 20d | 2013-08-14 | 2013-09-10 | 73 |  | Abe |
| 81 | QA | 10d | 2013-09-11 | 2013-09-24 | 80 |  | Marina |
| 82 | **Upgrade to Java 1.7** | 20d | 2013-08-14 | 2013-09-10 |  |  |  |
| 83 | Development | 10d | 2013-08-14 | 2013-08-27 | 73 |  | Abe |
| 84 | QA | 10d | 2013-08-28 | 2013-09-10 | 83 |  | Marina |
| 86 | Development | 10d | 2013-08-14 | 2013-08-27 | 73 |  | Abe |
| 87 | QA | 10d | 2013-08-28 | 2013-09-10 | 86 |  | Marina |
| 88 | **Address TRANSCEND Issues** | 30d | 2013-09-11 | 2013-10-22 |  |  |  |
| 89 | Development | 20d | 2013-09-11 | 2013-10-08 | 80 |  | Abe |
| 90 | QA | 10d | 2013-10-09 | 2013-10-22 | 89 |  | Marina |
| 92 | Cut release candidate | 0d | 2013-10-22 | 2013-10-22 | 72, 75, 79, 82, 85, 88 |  | Abe |
| 93 | Request approval to deploy to QA | 0d | 2013-10-22 | 2013-10-22 | 92 |  | Mike |
| 95 | Approval to deploy to QA | 0d | 2013-10-25 | 2013-10-25 | 94 |  | GQR |
| 96 | **QA Tier** | 11d? | 2013-10-28 | 2013-11-11 |  |  |  |
| 97 | Deploy to QA tier | 1d? | 2013-10-28 | 2013-10-28 | 95 |  |  |
| 102 | Request approval to deploy to STAGE | 0d | 2013-11-04 | 2013-11-04 | 101 |  | Marina |
| 104 | Approval to deploy to STAGE | 0d | 2013-11-07 | 2013-11-07 | 103 |  | QA* |
| 106 | **STAGE Tier** | 22d | 2013-11-07 | 2013-12-09 |  |  |  |
| 107 | Request deployment to STAGE | 0d | 2013-11-07 | 2013-11-07 | 104 |  | Marina; Mike |
| 109 | Smoke test | 3d | 2013-11-13 | 2013-11-15 | 108 |  | Marina |
| 110 | Request security appscan | 0d | 2013-11-15 | 2013-11-15 | 109 |  | Marina; Mike |
| 111 | Run security appscan | 10d | 2013-11-18 | 2013-11-29 | 110 |  | Systems* |
| 112 | Create QA Test Summary Report | 3d | 2013-12-02 | 2013-12-04 | 111 |  | Marina |
| 113 | Request approval to deploy to PROD | 0d | 2013-12-04 | 2013-12-04 | 112 |  | Marina |
| 114 | Test Results Review and Reporting | 3d | 2013-12-05 | 2013-12-09 | 109, 113 |  | QA* |
| 115 | Approval to deploy to PROD | 0d | 2013-12-09 | 2013-12-09 | 114 |  | GQR |
| 116 | **PRODUCTION** | 5d? | 2013-12-10 | 2013-12-16 |  |  |  |
| 117 | Request deployment to PRODUCTION | 1d? | 2013-12-10 | 2013-12-10 | 115 |  | GQR |

Removed: 39 Regression Testing on STAGE; 50 Bug Fixes and Improvements; 52 Support for release 1.4.1; 53 Performance Improvements; 54 Usability and Other Improvements Requested; 55 Compliance (EPLC, Section 508); 57 Appscan on Dev; 64 Appscan on STAGE tier; 65 Regression Testing on STAGE; 74 *QA and Systems are external resources and NOT being proposed under this contract.

Changed:

| ID | Task | Start | Finish | Duration | Complete | Total float | Predecessors | Other |
| --- | --- | --- | --- | --- | --- | --- | --- | --- |
| 1 | **caIntegrator** |  | 2013-12-05 → 2014-01-24 (+50d) | 264d? → 300d? | 20% → 21% |  |  |  |
| 7 | **caIntegrator 1.4.1** |  | 2013-07-25 → 2013-09-24 (+61d) | 165.5d? → 209d? | 43% → 48% | 7.5d → 0d |  |  |
| 33 | Regression Testing on QA tier | 2013-05-14 A | 2013-06-10 A |  | 0% → 100% | 7.5d → none | 31 → none |  |
| 34 | Installer Testing | 2013-06-11 A | 2013-06-14 A |  | 0% → 100% | 7.5d → none |  |  |
| 35 | Section 508 testing on QA tier | 2013-06-17 A | 2013-06-18 A |  | 0% → 100% | 34d → none |  |  |
| 36 | Appscan on QA tier | 2013-06-17 A | 2013-06-21 A |  | 0% → 100% | 7.5d → none |  |  |
| 49 | Test Results Review and Reporting | 2013-06-24 → 2013-08-19 (+56d) | 2013-06-26 → 2013-08-21 (+56d) |  |  | 7.5d → 24d | 36 → 48 |  |
| 51 | Create release artifacts | 2013-07-02 → 2013-08-19 (+48d) | 2013-07-03 → 2013-08-20 (+48d) |  |  | 23d → 25d | 54 → 50 | resources none → Mike; Abe |
| 54 | Deploy to STAGE | 2013-06-27 → 2013-08-19 (+53d) | 2013-07-01 → 2013-08-21 (+51d) |  |  | 7.5d → 0d | 49 → 53 |  |
| 57 | Run security appscan | 2013-07-02 → 2013-08-27 (+56d) | 2013-07-15 → 2013-09-09 (+56d) |  |  | 7.5d → 0d | 54 → 56 | was named Appscan on STAGE tier |
| 60 | Test Results Review and Reporting | 2013-07-16 → 2013-09-13 (+59d) | 2013-07-18 → 2013-09-17 (+61d) |  |  | 7.5d → 0d | 57, Regression Testing on STAGE → 55, 59 |  |
| 64 | Deploy to PRODUCTION | 2013-07-19 → 2013-09-19 (+62d) | 2013-07-23 → 2013-09-23 (+62d) |  |  | 7.5d → 0d | 60 → 63 |  |
| 65 | Update product landing page | 2013-07-24 → 2013-09-24 (+62d) | 2013-07-24 → 2013-09-24 (+62d) |  |  | 7.5d → 0.5d |  |  |
| 66 | QA smoke tests PRODUCTION | 2013-07-24 → 2013-09-24 (+62d) | 2013-07-25 → 2013-09-24 (+61d) |  |  | 7.5d → 0d | 64, 65 → 64 |  |
| 67 | MILESTONE: RELEASE 1.4.1 | 2013-07-25 → 2013-09-24 (+61d) | 2013-07-25 → 2013-09-24 (+61d) |  |  | 7.5d → 0d | 66 → 62 |  |
| 69 | **caIntegrator 1.4.2** | 2013-04-25 → 2012-12-03 (-143d) | 2013-12-05 → 2014-01-24 (+50d) | 161d → 300d? |  |  |  | was named caIntegrator 1.5 |
| 75 | **Upgrade Non-NCI Tech Stack** | 2013-05-02 → 2013-07-03 (+62d) | 2013-05-29 → 2013-08-13 (+76d) | 20d → 30d |  | 7d → 79d | 70 → none | was named Tech Stack Upgrades - Spring; resources Abe → none |
| 85 | **Upgrade CSM/UPT** | 2013-06-20 → 2013-08-14 (+55d) | 2013-06-25 → 2013-09-10 (+77d) | 4d → 20d |  | 7d → 59d | Bug Fixes and Improvements → none | was named CSM/UPT upgrade changes; resources Abe → none |
| 91 | MILESTONE: EPLC REVIEW (as needed) | 2013-09-17 → 2012-12-03 (-288d) | 2013-09-17 → 2012-12-03 (-288d) |  |  | 57d → 300d | Compliance (EPLC, Section 508) → none |  |
| 94 | Test Results Review and Reporting | 2013-10-25 → 2013-10-23 (-2d) | 2013-10-29 → 2013-10-25 (-4d) |  |  | 7d → 29d | 101 → 93 |  |
| 98 | Regression Testing on QA tier | 2013-09-18 → 2013-10-29 (+41d) | 2013-10-03 → 2013-11-04 (+32d) | 12d → 5d |  | 7d → 55d | Compliance (EPLC, Section 508) → 97 | resources QA* → Marina |
| 99 | Installer Testing | 2013-10-04 → 2013-11-05 (+32d) | 2013-10-09 → 2013-11-08 (+30d) |  |  | 39d → 55d |  | resources QA* → Marina |
| 100 | Section 508 testing on QA tier | 2013-10-10 → 2013-10-29 (+19d) | 2013-10-11 → 2013-10-30 (+19d) |  |  | 39d → 62d | 99 → 97 | resources QA* → Mike |
| 101 | Appscan on QA tier | 2013-10-04 → 2013-10-29 (+25d) | 2013-10-24 → 2013-11-04 (+11d) | 15d → 5d |  | 7d → 29d | 98 → 97 |  |
| 103 | Test Results Review and Reporting | 2013-11-21 → 2013-11-05 (-16d) | 2013-11-21 → 2013-11-07 (-14d) | 1d → 3d |  | 7d → 29d | Appscan on STAGE tier, Regression Testing on STAGE → 102 |  |
| 105 | Create release artifacts | 2013-10-31 → 2013-11-08 (+8d) | 2013-10-31 → 2013-11-11 (+11d) | 1d → 2d |  | 25d → 54d | 108 → 104 | resources none → Mike; Abe |
| 108 | Deploy to STAGE | 2013-10-30 → 2013-11-08 (+9d) | 2013-10-30 → 2013-11-12 (+13d) | 1d → 3d |  | 7d → 29d | 94 → 107 |  |
| 118 | Deploy to PRODUCTION | 2013-11-22 → 2013-12-11 (+19d) | 2013-11-25 → 2013-12-13 (+18d) | 2d → 3d |  | 7d → 29d | 103 → 117 |  |
| 119 | Update product landing page | 2013-11-26 → 2013-12-16 (+20d) | 2013-11-26 → 2013-12-16 (+20d) |  |  | 7.5d → 29.5d |  |  |
| 120 | QA smoke tests PRODUCTION | 2013-11-26 → 2013-12-16 (+20d) | 2013-11-26 → 2013-12-16 (+20d) |  |  | 7d → 29d |  |  |
| 121 | MILESTONE: RELEASE 1.4.2 | 2013-11-26 → 2012-12-03 (-358d) | 2013-11-26 → 2012-12-03 (-358d) |  |  | 7d → 300d | 120 → none | was named MILESTONE: RELEASE 1.5 |
| 122 | User Support | 2013-08-06 → 2013-09-25 (+50d) | 2013-12-05 → 2014-01-24 (+50d) |  |  |  |  |  |

## Version 12 (saved 2013-07-25)

Last finish 2014-01-24 → 2013-11-29 (-56d). Complete tasks 29 → 31.

Added:

| ID | Task | Duration | Start | Finish | Predecessors | Resources |
| --- | --- | --- | --- | --- | --- | --- |
| 73 | Upgrade Struts & Tiles | 10d | 2013-07-17 A | 2013-07-30 | 72 | Abe |
| 109 | **User Support (as needed)** | 223d | 2013-01-23 | 2013-11-29 |  |  |
| 110 | Support 1.4.0.1 | 223d | 2013-01-23 | 2013-11-29 | 6 | Abe |
| 111 | Support 1.4.1 | 80d | 2013-08-12 | 2013-11-29 | 64 | Abe |
| 112 | Support 1.4.2 | 10d | 2013-11-18 | 2013-11-29 | 108 | Abe |

Removed: 44 Regression test; 59 Request approval to deploy to PROD; 61 Approval to deploy to PROD; 68 User Support; 77 Development; 78 QA; 79 Upgrade NCI Tech Stack; 80 Development; 81 QA; 82 Upgrade to Java 1.7; 83 Development; 84 QA; 86 Development; 87 QA; 122 User Support

Changed:

| ID | Task | Start | Finish | Duration | Complete | Total float | Predecessors | Other |
| --- | --- | --- | --- | --- | --- | --- | --- | --- |
| 1 | **caIntegrator** |  | 2014-01-24 → 2013-11-15 (-70d) | 300d? → 250d? | 21% → 53% | 0d → 10d |  |  |
| 7 | **caIntegrator 1.4.1** |  | 2013-09-24 → 2013-08-29 (-26d) | 209d? → 191d? | 48% → 74% | 0d → 66d |  |  |
| 32 | **QA Tier** |  | 2013-08-21 → 2013-08-07 (-14d) | 72d? → 62d? | 45% → 61% | 24d → 82d |  |  |
| 37 | **Struts patch** |  | 2013-08-16 → 2013-08-02 (-14d) | 22d? → 12d? | 5% → 20% |  |  |  |
| 40 | Deploy to the QA Tier | 2013-07-22 A | 2013-07-22 A |  | 0% → 100% | 0d → none |  |  |
| 41 | Smoke test | 2013-07-23 A |  |  | 0% → 50% |  |  |  |
| 46 | Update test report | 2013-08-16 → 2013-08-02 (-14d) | 2013-08-16 → 2013-08-02 (-14d) |  |  |  | 41, 42, 43, Regression test, 44, 45 → 41, 42, 43, 44, 45 |  |
| 47 | Request approval to deploy to STAGE and PROD | 2013-08-16 → 2013-08-02 (-14d) | 2013-08-16 → 2013-08-02 (-14d) |  |  | 24d → 82d |  | was named Request approval to deploy to STAGE |
| 48 | Test Results Review and Reporting | 2013-08-19 → 2013-08-05 (-14d) | 2013-08-21 → 2013-08-07 (-14d) |  |  | 24d → 82d |  |  |
| 49 | Approval to deploy to STAGE and PROD | 2013-08-16 → 2013-08-02 (-14d) | 2013-08-16 → 2013-08-02 (-14d) |  |  |  |  | was named Approval to deploy to STAGE |
| 50 | Create release artifacts | 2013-08-19 → 2013-08-05 (-14d) | 2013-08-20 → 2013-08-06 (-14d) |  |  | 25d → 83d |  |  |
| 51 | **STAGE Tier** | 2013-08-16 → 2013-08-02 (-14d) | 2013-09-17 → 2013-08-29 (-19d) | 22d → 19d |  | 0d → 66d |  |  |
| 52 | Request deployment to STAGE | 2013-08-16 → 2013-08-02 (-14d) | 2013-08-16 → 2013-08-02 (-14d) |  |  | 0d → 66d |  |  |
| 53 | Deploy to STAGE | 2013-08-19 → 2013-08-05 (-14d) | 2013-08-21 → 2013-08-07 (-14d) |  |  | 0d → 66d |  |  |
| 54 | Smoke test | 2013-08-22 → 2013-08-08 (-14d) | 2013-08-26 → 2013-08-12 (-14d) |  |  | 0d → 66d |  |  |
| 55 | Request security appscan | 2013-08-26 → 2013-08-12 (-14d) | 2013-08-26 → 2013-08-12 (-14d) |  |  | 0d → 66d |  |  |
| 56 | Run security appscan | 2013-08-27 → 2013-08-13 (-14d) | 2013-09-09 → 2013-08-26 (-14d) |  |  | 0d → 66d |  |  |
| 57 | Create QA Test Summary Report | 2013-09-10 → 2013-08-27 (-14d) | 2013-09-12 → 2013-08-29 (-14d) |  |  | 0d → 66d |  |  |
| 58 | Test Results Review and Reporting | 2013-09-13 → 2013-08-13 (-31d) | 2013-09-17 → 2013-08-15 (-33d) |  |  | 0d → 76d | 54, Request approval to deploy to PROD → 54 |  |
| 59 | **PRODUCTION** | 2013-09-18 → 2013-08-05 (-44d) | 2013-09-24 → 2013-08-09 (-46d) |  |  |  |  |  |
| 60 | Request deployment to PRODUCTION | 2013-09-18 → 2013-08-05 (-44d) | 2013-09-18 → 2013-08-05 (-44d) |  |  |  | Approval to deploy to PROD → 49 |  |
| 61 | Deploy to PRODUCTION | 2013-09-19 → 2013-08-06 (-44d) | 2013-09-23 → 2013-08-08 (-46d) |  |  |  |  |  |
| 62 | Update product landing page | 2013-09-24 → 2013-08-09 (-46d) | 2013-09-24 → 2013-08-09 (-46d) |  |  |  |  |  |
| 63 | QA smoke tests PRODUCTION | 2013-09-24 → 2013-08-09 (-46d) | 2013-09-24 → 2013-08-09 (-46d) |  |  |  |  |  |
| 64 | MILESTONE: RELEASE 1.4.1 | 2013-09-24 → 2013-08-09 (-46d) | 2013-09-24 → 2013-08-09 (-46d) |  |  |  |  |  |
| 65 | **caIntegrator 1.4.2** | 2012-12-03 A | 2014-01-24 → 2013-11-15 (-70d) | 300d? → 250d? | 0% → 37% | 0d → 10d |  |  |
| 67 | **Development** | 2012-12-03 A | 2013-10-25 → 2013-09-26 (-29d) | 235d → 214d | 0% → 51% | 65d → 46d |  |  |
| 68 | **Improve performance** | 2013-04-25 A |  |  | 0% → 67% | 29d → 19d |  |  |
| 69 | Development | 2013-04-25 A |  |  | 0% → 75% | 29d → 19d |  |  |
| 71 | **Upgrade Tech Stack Components** | 2013-07-03 A | 2013-08-13 → 2013-08-05 (-8d) | 30d → 24d | 0% → 63% | 79d → 35d |  | was named Upgrade Non-NCI Tech Stack |
| 72 | Upgrade Spring | 2013-07-03 A | 2013-08-13 → 2013-07-16 A (-28d) | 30d → 10d | 0% → 100% | 79d → none |  | constraint none → start no earlier than 2013-07-03; resources none → Abe |
| 74 | Upgrade CSM/UPT | 2013-08-14 → 2013-07-31 (-14d) | 2013-09-10 → 2013-08-05 (-36d) | 20d → 4d |  | 59d → 35d | none → 73 |  |
| 75 | **Address TRANSCEND Issues** | 2013-09-11 → 2013-08-13 (-29d) | 2013-10-22 → 2013-09-23 (-29d) |  |  | 29d → 0d |  |  |
| 76 | Development | 2013-09-11 → 2013-08-13 (-29d) | 2013-10-08 → 2013-09-09 (-29d) |  |  | 29d → 0d | Development → none | constraint none → start no earlier than 2013-08-13 |
| 77 | QA | 2013-10-09 → 2013-09-10 (-29d) | 2013-10-22 → 2013-09-23 (-29d) |  |  | 29d → 0d |  |  |
| 79 | Cut release candidate | 2013-10-22 → 2013-09-23 (-29d) | 2013-10-22 → 2013-09-23 (-29d) |  |  | 29d → 0d | 68, 71, Upgrade NCI Tech Stack, Upgrade to Java 1.7, 74, 75 → 68, 71, 74, 75 |  |
| 80 | Request approval to deploy to QA | 2013-10-22 → 2013-09-23 (-29d) | 2013-10-22 → 2013-09-23 (-29d) |  |  | 29d → 0d |  |  |
| 81 | Test Results Review and Reporting | 2013-10-23 → 2013-09-24 (-29d) | 2013-10-25 → 2013-09-26 (-29d) |  |  | 29d → 0d |  |  |
| 82 | Approval to deploy to QA | 2013-10-25 → 2013-09-26 (-29d) | 2013-10-25 → 2013-09-26 (-29d) |  |  | 29d → 0d |  |  |
| 83 | **QA Tier** | 2013-10-28 → 2013-09-27 (-31d) | 2013-11-11 → 2013-10-11 (-31d) |  |  | 29d → 0d |  |  |
| 84 | Deploy to QA tier | 2013-10-28 → 2013-09-27 (-31d) | 2013-10-28 → 2013-09-27 (-31d) |  |  | 29d → 0d |  |  |
| 85 | Regression Testing on QA tier | 2013-10-29 → 2013-09-30 (-29d) | 2013-11-04 → 2013-10-04 (-31d) |  |  | 55d → 36d |  |  |
| 86 | Installer Testing | 2013-11-05 → 2013-10-07 (-29d) | 2013-11-08 → 2013-10-10 (-29d) |  |  | 55d → 36d |  |  |
| 87 | Section 508 testing on QA tier | 2013-10-29 → 2013-09-30 (-29d) | 2013-10-30 → 2013-10-01 (-29d) |  |  | 62d → 43d |  |  |
| 88 | Appscan on QA tier | 2013-10-29 → 2013-09-30 (-29d) | 2013-11-04 → 2013-10-04 (-31d) |  |  | 29d → 0d |  |  |
| 89 | Request approval to deploy to STAGE | 2013-11-04 → 2013-10-04 (-31d) | 2013-11-04 → 2013-10-04 (-31d) |  |  | 29d → 0d |  |  |
| 90 | Test Results Review and Reporting | 2013-11-05 → 2013-10-07 (-29d) | 2013-11-07 → 2013-10-09 (-29d) |  |  | 29d → 0d |  |  |
| 91 | Approval to deploy to STAGE | 2013-11-07 → 2013-10-09 (-29d) | 2013-11-07 → 2013-10-09 (-29d) |  |  | 29d → 0d |  |  |
| 92 | Create release artifacts | 2013-11-08 → 2013-10-10 (-29d) | 2013-11-11 → 2013-10-11 (-31d) |  |  | 54d → 35d |  |  |
| 93 | **STAGE Tier** | 2013-11-07 → 2013-10-09 (-29d) | 2013-12-09 → 2013-11-08 (-31d) |  |  | 29d → 0d |  |  |
| 94 | Request deployment to STAGE | 2013-11-07 → 2013-10-09 (-29d) | 2013-11-07 → 2013-10-09 (-29d) |  |  | 29d → 0d |  |  |
| 95 | Deploy to STAGE | 2013-11-08 → 2013-10-10 (-29d) | 2013-11-12 → 2013-10-14 (-29d) |  |  | 29d → 0d |  |  |
| 96 | Smoke test | 2013-11-13 → 2013-10-15 (-29d) | 2013-11-15 → 2013-10-17 (-29d) |  |  | 29d → 0d |  |  |
| 97 | Request security appscan | 2013-11-15 → 2013-10-17 (-29d) | 2013-11-15 → 2013-10-17 (-29d) |  |  | 29d → 0d |  |  |
| 98 | Run security appscan | 2013-11-18 → 2013-10-18 (-31d) | 2013-11-29 → 2013-10-31 (-29d) |  |  | 29d → 0d |  |  |
| 99 | Create QA Test Summary Report | 2013-12-02 → 2013-11-01 (-31d) | 2013-12-04 → 2013-11-05 (-29d) |  |  | 29d → 0d |  |  |
| 100 | Request approval to deploy to PROD | 2013-12-04 → 2013-11-05 (-29d) | 2013-12-04 → 2013-11-05 (-29d) |  |  | 29d → 0d |  |  |
| 101 | Test Results Review and Reporting | 2013-12-05 → 2013-11-06 (-29d) | 2013-12-09 → 2013-11-08 (-31d) |  |  | 29d → 0d |  |  |
| 102 | Approval to deploy to PROD | 2013-12-09 → 2013-11-08 (-31d) | 2013-12-09 → 2013-11-08 (-31d) |  |  | 29d → 0d |  |  |
| 103 | **PRODUCTION** | 2013-12-10 → 2013-11-11 (-29d) | 2013-12-16 → 2013-11-15 (-31d) |  |  | 29d → 0d |  |  |
| 104 | Request deployment to PRODUCTION | 2013-12-10 → 2013-11-11 (-29d) | 2013-12-10 → 2013-11-11 (-29d) |  |  | 29d → 0d |  |  |
| 105 | Deploy to PRODUCTION | 2013-12-11 → 2013-11-12 (-29d) | 2013-12-13 → 2013-11-14 (-29d) |  |  | 29d → 0d |  |  |
| 106 | Update product landing page | 2013-12-16 → 2013-11-15 (-31d) | 2013-12-16 → 2013-11-15 (-31d) |  |  | 29.5d → 0.5d |  |  |
| 107 | QA smoke tests PRODUCTION | 2013-12-16 → 2013-11-15 (-31d) | 2013-12-16 → 2013-11-15 (-31d) |  |  | 29d → 0d |  |  |
| 108 | MILESTONE: RELEASE 1.4.2 | 2012-12-03 → 2013-11-15 (+347d) | 2012-12-03 → 2013-11-15 (+347d) |  |  | 300d → 0d | none → 103 |  |

## Version 13 (saved 2013-07-29)

Note of the change: Status updates

Last finish 2013-11-29 → 2013-12-13 (+14d). Complete tasks 31 → 32.

Changed:

| ID | Task | Start | Finish | Duration | Complete | Total float | Predecessors | Other |
| --- | --- | --- | --- | --- | --- | --- | --- | --- |
| 7 | **caIntegrator 1.4.1** |  | 2013-08-29 → 2013-09-12 (+14d) | 191d? → 201d? |  |  |  |  |
| 32 | **QA Tier** |  | 2013-08-07 → 2013-08-21 (+14d) | 62d? → 72d? | 61% → 60% |  |  |  |
| 37 | **Struts patch** |  | 2013-08-02 → 2013-08-16 (+14d) | 12d? → 22d? | 20% → 18% |  |  |  |
| 41 | Smoke test | 2013-07-23 A → 2013-07-31 (+8d) | 2013-07-25 → 2013-08-02 (+8d) |  | 50% → 0% |  |  | constraint none → start no earlier than 2013-07-31 |
| 42 | Run Section 508 scan and manage issues | 2013-07-26 A | 2013-07-26 A |  | 0% → 100% | 4d → none |  |  |
| 43 | Run security appscan | 2013-07-26 → 2013-08-05 (+10d) | 2013-08-01 → 2013-08-09 (+8d) |  |  | 0d → 4d |  |  |
| 44 | Test local install | 2013-07-23 → 2013-08-05 (+13d) | 2013-07-26 → 2013-08-08 (+13d) |  |  | 4d → 0d | 40 → 41, 40 |  |
| 45 | Test local upgrade | 2013-07-23 → 2013-08-09 (+17d) | 2013-07-29 → 2013-08-15 (+17d) |  |  | 3d → 0d | 40 → 44, 40 |  |
| 46 | Update test report | 2013-08-02 → 2013-08-16 (+14d) | 2013-08-02 → 2013-08-16 (+14d) |  |  |  |  |  |
| 47 | Request approval to deploy to STAGE and PROD | 2013-08-02 → 2013-08-16 (+14d) | 2013-08-02 → 2013-08-16 (+14d) |  |  |  |  |  |
| 48 | Test Results Review and Reporting | 2013-08-05 → 2013-08-19 (+14d) | 2013-08-07 → 2013-08-21 (+14d) |  |  |  |  |  |
| 49 | Approval to deploy to STAGE and PROD | 2013-08-02 → 2013-08-16 (+14d) | 2013-08-02 → 2013-08-16 (+14d) |  |  |  |  |  |
| 50 | Create release artifacts | 2013-08-05 → 2013-08-19 (+14d) | 2013-08-06 → 2013-08-20 (+14d) |  |  |  |  |  |
| 51 | **STAGE Tier** | 2013-08-02 → 2013-08-16 (+14d) | 2013-08-29 → 2013-09-12 (+14d) |  |  |  |  |  |
| 52 | Request deployment to STAGE | 2013-08-02 → 2013-08-16 (+14d) | 2013-08-02 → 2013-08-16 (+14d) |  |  |  |  |  |
| 53 | Deploy to STAGE | 2013-08-05 → 2013-08-19 (+14d) | 2013-08-07 → 2013-08-21 (+14d) |  |  |  |  |  |
| 54 | Smoke test | 2013-08-08 → 2013-08-22 (+14d) | 2013-08-12 → 2013-08-26 (+14d) |  |  |  |  |  |
| 55 | Request security appscan | 2013-08-12 → 2013-08-26 (+14d) | 2013-08-12 → 2013-08-26 (+14d) |  |  |  |  |  |
| 56 | Run security appscan | 2013-08-13 → 2013-08-27 (+14d) | 2013-08-26 → 2013-09-09 (+14d) |  |  |  |  |  |
| 57 | Create QA Test Summary Report | 2013-08-27 → 2013-09-10 (+14d) | 2013-08-29 → 2013-09-12 (+14d) |  |  |  |  |  |
| 58 | Test Results Review and Reporting | 2013-08-13 → 2013-08-27 (+14d) | 2013-08-15 → 2013-08-29 (+14d) |  |  |  |  |  |
| 59 | **PRODUCTION** | 2013-08-05 → 2013-08-19 (+14d) | 2013-08-09 → 2013-08-23 (+14d) |  |  |  |  |  |
| 60 | Request deployment to PRODUCTION | 2013-08-05 → 2013-08-19 (+14d) | 2013-08-05 → 2013-08-19 (+14d) |  |  |  |  |  |
| 61 | Deploy to PRODUCTION | 2013-08-06 → 2013-08-20 (+14d) | 2013-08-08 → 2013-08-22 (+14d) |  |  |  |  |  |
| 62 | Update product landing page | 2013-08-09 → 2013-08-23 (+14d) | 2013-08-09 → 2013-08-23 (+14d) |  |  |  |  |  |
| 63 | QA smoke tests PRODUCTION | 2013-08-09 → 2013-08-23 (+14d) | 2013-08-09 → 2013-08-23 (+14d) |  |  |  |  |  |
| 64 | MILESTONE: RELEASE 1.4.1 | 2013-08-09 → 2013-08-23 (+14d) | 2013-08-09 → 2013-08-23 (+14d) |  |  |  |  |  |
| 109 | **User Support (as needed)** |  | 2013-11-29 → 2013-12-13 (+14d) | 223d → 233d |  |  |  |  |
| 111 | Support 1.4.1 | 2013-08-12 → 2013-08-26 (+14d) | 2013-11-29 → 2013-12-13 (+14d) |  |  |  |  |  |

## Version 14 (saved 2013-08-15)

Note of the change: Updates based on status check with QA

Last finish stays 2013-12-13. Complete tasks 32 → 34.

Changed:

| ID | Task | Start | Finish | Complete | Total float |
| --- | --- | --- | --- | --- | --- |
| 1 | **caIntegrator** |  |  | 53% → 56% |  |
| 7 | **caIntegrator 1.4.1** |  |  | 74% → 79% |  |
| 32 | **QA Tier** |  |  | 60% → 77% |  |
| 37 | **Struts patch** |  |  | 18% → 61% |  |
| 41 | Smoke test | 2013-07-31 A | 2013-08-02 A | 0% → 100% | 0d → none |
| 44 | Test local install | 2013-08-05 A | 2013-08-08 A | 0% → 100% | 0d → none |
| 45 | Test local upgrade | 2013-08-09 A |  | 0% → 50% |  |

## Version 15 (saved 2013-08-22)

Last finish 2013-12-13 → 2013-12-27 (+14d).

Added:

| ID | Task | Duration | Start | Finish | Predecessors | Resources |
| --- | --- | --- | --- | --- | --- | --- |
| 51 | Update installation documentation | 0.5d? | 2013-08-23 | 2013-08-23 | 44, 45 | Abe; Jill |

Changed:

| ID | Task | Start | Finish | Duration | Complete | Total float | Predecessors |
| --- | --- | --- | --- | --- | --- | --- | --- |
| 1 | **caIntegrator** |  |  |  | 56% → 55% | 20d → 30d |  |
| 7 | **caIntegrator 1.4.1** |  | 2013-09-12 → 2013-09-26 (+14d) | 201d? → 211d? | 79% → 77% |  |  |
| 32 | **QA Tier** |  | 2013-08-21 → 2013-09-04 (+14d) | 72d? → 82d? | 77% → 70% |  |  |
| 37 | **Struts patch** |  | 2013-08-16 → 2013-08-30 (+14d) | 22d? → 32d? | 61% → 50% |  |  |
| 43 | Run security appscan | 2013-08-05 → 2013-08-23 (+18d) | 2013-08-09 → 2013-08-29 (+20d) |  |  | 4d → 0d | 41 → 44, 45, 41 |
| 45 | Test local upgrade |  | 2013-08-15 → 2013-08-22 (+7d) | 5d → 10d | 50% → 25% |  |  |
| 46 | Update test report | 2013-08-16 → 2013-08-30 (+14d) | 2013-08-16 → 2013-08-30 (+14d) |  |  |  |  |
| 47 | Request approval to deploy to STAGE and PROD | 2013-08-16 → 2013-08-30 (+14d) | 2013-08-16 → 2013-08-30 (+14d) |  |  |  |  |
| 48 | Test Results Review and Reporting | 2013-08-19 → 2013-09-02 (+14d) | 2013-08-21 → 2013-09-04 (+14d) |  |  |  |  |
| 49 | Approval to deploy to STAGE and PROD | 2013-08-16 → 2013-08-30 (+14d) | 2013-08-16 → 2013-08-30 (+14d) |  |  |  |  |
| 50 | Create release artifacts | 2013-08-19 → 2013-09-02 (+14d) | 2013-08-20 → 2013-09-03 (+14d) |  |  |  |  |
| 52 | **STAGE Tier** | 2013-08-16 → 2013-08-30 (+14d) | 2013-09-12 → 2013-09-26 (+14d) |  |  |  |  |
| 53 | Request deployment to STAGE | 2013-08-16 → 2013-08-30 (+14d) | 2013-08-16 → 2013-08-30 (+14d) |  |  |  |  |
| 54 | Deploy to STAGE | 2013-08-19 → 2013-09-02 (+14d) | 2013-08-21 → 2013-09-04 (+14d) |  |  |  |  |
| 55 | Smoke test | 2013-08-22 → 2013-09-05 (+14d) | 2013-08-26 → 2013-09-09 (+14d) |  |  |  |  |
| 56 | Request security appscan | 2013-08-26 → 2013-09-09 (+14d) | 2013-08-26 → 2013-09-09 (+14d) |  |  |  |  |
| 57 | Run security appscan | 2013-08-27 → 2013-09-10 (+14d) | 2013-09-09 → 2013-09-23 (+14d) |  |  |  |  |
| 58 | Create QA Test Summary Report | 2013-09-10 → 2013-09-24 (+14d) | 2013-09-12 → 2013-09-26 (+14d) |  |  |  |  |
| 59 | Test Results Review and Reporting | 2013-08-27 → 2013-09-10 (+14d) | 2013-08-29 → 2013-09-12 (+14d) |  |  |  |  |
| 60 | **PRODUCTION** | 2013-08-19 → 2013-09-02 (+14d) | 2013-08-23 → 2013-09-06 (+14d) |  |  |  |  |
| 61 | Request deployment to PRODUCTION | 2013-08-19 → 2013-09-02 (+14d) | 2013-08-19 → 2013-09-02 (+14d) |  |  |  |  |
| 62 | Deploy to PRODUCTION | 2013-08-20 → 2013-09-03 (+14d) | 2013-08-22 → 2013-09-05 (+14d) |  |  |  |  |
| 63 | Update product landing page | 2013-08-23 → 2013-09-06 (+14d) | 2013-08-23 → 2013-09-06 (+14d) |  |  |  |  |
| 64 | QA smoke tests PRODUCTION | 2013-08-23 → 2013-09-06 (+14d) | 2013-08-23 → 2013-09-06 (+14d) |  |  |  |  |
| 65 | MILESTONE: RELEASE 1.4.1 | 2013-08-23 → 2013-09-06 (+14d) | 2013-08-23 → 2013-09-06 (+14d) |  |  |  |  |
| 110 | **User Support (as needed)** |  | 2013-12-13 → 2013-12-27 (+14d) | 233d → 243d |  |  |  |
| 112 | Support 1.4.1 | 2013-08-26 → 2013-09-09 (+14d) | 2013-12-13 → 2013-12-27 (+14d) |  |  |  |  |

## Version 16 (saved 2013-09-05)

Note of the change: Updates to reflect task completion and revised projections

Last finish 2013-12-27 → 2014-01-03 (+7d). Complete tasks 34 → 39.

Added:

| ID | Task | Duration | Start | Finish | Predecessors | Resources |
| --- | --- | --- | --- | --- | --- | --- |
| 46 | **Resolve issues identified by QA** | 23d? | 2013-08-05 A | 2013-09-04 A |  |  |
| 47 | Fix CAINT-1290, CAINT-1327, CAINT-1328, CAINT-1329, CAINT-1331, CAINT-1332 | 20d | 2013-08-05 A | 2013-08-30 A | 41 | Abe |
| 48 | Smoke test the fixes | 3d | 2013-09-02 A | 2013-09-04 A | 47 | Marina |
| 49 | Re-run Section 508 Scan | 1d? | 2013-09-02 A | 2013-09-02 A | 47 | Shine |

Changed:

| ID | Task | Start | Finish | Duration | Complete | Total float | Predecessors | Other |
| --- | --- | --- | --- | --- | --- | --- | --- | --- |
| 1 | **caIntegrator** |  |  |  | 55% → 60% | 30d → 35d |  |  |
| 7 | **caIntegrator 1.4.1** |  | 2013-09-26 → 2013-10-04 (+8d) | 211d? → 217d? | 77% → 85% | 66d → 65d |  |  |
| 32 | **QA Tier** |  | 2013-09-04 → 2013-09-12 (+8d) | 82d? → 88d? | 70% → 92% | 82d → 81d |  |  |
| 37 | **Struts patch** |  | 2013-08-30 → 2013-09-09 (+10d) | 32d? → 38d? | 50% → 96% |  |  |  |
| 43 | Run security appscan | 2013-08-23 A | 2013-08-29 → 2013-08-30 A (+1d) | 5d → 6d | 0% → 100% | 0d → none |  |  |
| 45 | Test local upgrade |  | 2013-08-22 A |  | 25% → 100% | 0d → none |  |  |
| 50 | Create the Test Plan for STAGE and update the test report for QA | 2013-08-30 → 2013-09-05 A (+6d) | 2013-08-30 → 2013-09-09 (+10d) | 1d? → 3d | 0% → 33% |  | 41, 42, 43, 44, 45 → 41, 42, 43, 44, 46, 45 | was named Update test report |
| 51 | Request approval to deploy to STAGE and PROD | 2013-08-30 → 2013-09-09 (+10d) | 2013-08-30 → 2013-09-09 (+10d) |  |  | 82d → 81d |  |  |
| 52 | Test Results Review and Reporting | 2013-09-02 → 2013-09-10 (+8d) | 2013-09-04 → 2013-09-12 (+8d) |  |  | 82d → 81d |  |  |
| 53 | Approval to deploy to STAGE and PROD | 2013-08-30 → 2013-09-09 (+10d) | 2013-08-30 → 2013-09-09 (+10d) |  |  |  |  |  |
| 54 | Create release artifacts | 2013-09-02 → 2013-09-10 (+8d) | 2013-09-03 → 2013-09-11 (+8d) |  |  | 83d → 82d |  |  |
| 56 | **STAGE Tier** | 2013-08-30 → 2013-09-09 (+10d) | 2013-09-26 → 2013-10-04 (+8d) |  |  | 66d → 65d |  |  |
| 57 | Request deployment to STAGE | 2013-08-30 → 2013-09-09 (+10d) | 2013-08-30 → 2013-09-09 (+10d) |  |  | 66d → 65d |  |  |
| 58 | Deploy to STAGE | 2013-09-02 → 2013-09-10 (+8d) | 2013-09-04 → 2013-09-12 (+8d) |  |  | 66d → 65d |  |  |
| 59 | Smoke test | 2013-09-05 → 2013-09-13 (+8d) | 2013-09-09 → 2013-09-17 (+8d) |  |  | 66d → 65d |  |  |
| 60 | Request security appscan | 2013-09-09 → 2013-09-17 (+8d) | 2013-09-09 → 2013-09-17 (+8d) |  |  | 66d → 65d |  |  |
| 61 | Run security appscan | 2013-09-10 → 2013-09-18 (+8d) | 2013-09-23 → 2013-10-01 (+8d) |  |  | 66d → 65d |  |  |
| 62 | Create QA Test Summary Report | 2013-09-24 → 2013-10-02 (+8d) | 2013-09-26 → 2013-10-04 (+8d) |  |  | 66d → 65d |  |  |
| 63 | Test Results Review and Reporting | 2013-09-10 → 2013-09-18 (+8d) | 2013-09-12 → 2013-09-20 (+8d) |  |  | 76d → 75d |  |  |
| 64 | **PRODUCTION** | 2013-09-02 → 2013-09-09 (+7d) | 2013-09-06 → 2013-09-13 (+7d) | 5d? → 4d |  |  |  |  |
| 65 | Request deployment to PRODUCTION | 2013-09-02 → 2013-09-09 (+7d) | 2013-09-02 → 2013-09-09 (+7d) | 1d? → 0d |  |  |  |  |
| 66 | Deploy to PRODUCTION | 2013-09-03 → 2013-09-10 (+7d) | 2013-09-05 → 2013-09-12 (+7d) |  |  |  |  |  |
| 67 | Update product landing page | 2013-09-06 → 2013-09-13 (+7d) | 2013-09-06 → 2013-09-13 (+7d) |  |  |  |  |  |
| 68 | QA smoke tests PRODUCTION | 2013-09-06 → 2013-09-13 (+7d) | 2013-09-06 → 2013-09-13 (+7d) |  |  |  |  |  |
| 69 | MILESTONE: RELEASE 1.4.1 | 2013-09-06 → 2013-09-13 (+7d) | 2013-09-06 → 2013-09-13 (+7d) |  |  |  |  |  |
| 114 | **User Support (as needed)** |  | 2013-12-27 → 2014-01-03 (+7d) | 243d → 248d |  |  |  |  |
| 116 | Support 1.4.1 | 2013-09-09 → 2013-09-16 (+7d) | 2013-12-27 → 2014-01-03 (+7d) |  |  |  |  |  |

## Version 17 (saved 2013-09-17)

Note of the change: Updates for weekly status meeting

Last finish 2014-01-03 → 2014-01-16 (+13d). Complete tasks 39 → 46.

Removed: 60 Request security appscan; 61 Run security appscan

Changed:

| ID | Task | Start | Finish | Duration | Complete | Total float | Predecessors | Other |
| --- | --- | --- | --- | --- | --- | --- | --- | --- |
| 1 | **caIntegrator** |  |  |  | 60% → 64% | 35d → 44d |  |  |
| 7 | **caIntegrator 1.4.1** |  | 2013-10-04 → 2013-09-26 (-8d) | 217d? → 211d? | 85% → 94% | 65d → 80d |  |  |
| 32 | **QA Tier** |  | 2013-09-12 → 2013-09-16 (+4d) | 88d? → 90d? | 92% → 98% | 81d → 88d |  |  |
| 37 | **Struts patch** |  | 2013-09-09 A |  | 96% → 100% | 0d → none |  |  |
| 50 | Create the Test Plan for STAGE and update the test report for QA |  | 2013-09-09 A |  | 33% → 100% | 0d → none |  |  |
| 51 | Request approval to deploy to STAGE | 2013-09-09 A | 2013-09-09 A |  | 0% → 100% | 81d → none |  | was named Request approval to deploy to STAGE and PROD |
| 52 | Test Results Review and Reporting | 2013-09-10 A | 2013-09-12 A |  | 0% → 100% | 81d → none |  |  |
| 53 | Approval to deploy to STAGE | 2013-09-09 → 2013-09-12 A (+3d) | 2013-09-09 → 2013-09-12 A (+3d) |  | 0% → 100% | 0d → none | 50 → 52, 50 | was named Approval to deploy to STAGE and PROD |
| 54 | Create release artifacts | 2013-09-10 → 2013-09-13 (+3d) | 2013-09-11 → 2013-09-16 (+5d) |  |  | 82d → 88d |  |  |
| 55 | Update installation documentation | 2013-08-23 A | 2013-08-23 A |  | 0% → 100% | 95.5d → none |  |  |
| 56 | **STAGE Tier** | 2013-09-09 → 2013-09-12 A (+3d) | 2013-10-04 → 2013-09-23 (-11d) | 19d → 7d | 0% → 20% | 65d → 83d |  |  |
| 57 | Request deployment to STAGE | 2013-09-09 → 2013-09-12 A (+3d) | 2013-09-09 → 2013-09-12 A (+3d) |  | 0% → 100% | 65d → none |  | resources Marina; Mike → Sichen |
| 58 | Deploy to STAGE | 2013-09-10 → 2013-09-13 A (+3d) | 2013-09-12 → 2013-09-16 A (+4d) | 3d → 2d | 0% → 100% | 65d → none |  |  |
| 59 | Smoke test | 2013-09-13 → 2013-09-17 (+4d) | 2013-09-17 → 2013-09-18 (+1d) | 3d → 2d |  | 65d → 0d |  |  |
| 60 | Create QA Test Summary Report | 2013-10-02 → 2013-09-19 (-13d) | 2013-10-04 → 2013-09-23 (-11d) |  |  | 65d → 83d | Run security appscan → 59 |  |
| 61 | Test Results Review and Reporting | 2013-09-18 → 2013-09-19 (+1d) | 2013-09-20 → 2013-09-23 (+3d) |  |  | 75d → 0d |  |  |
| 62 | **PRODUCTION** | 2013-09-09 → 2013-09-23 (+14d) | 2013-09-13 → 2013-09-26 (+13d) | 4d → 3d |  |  |  |  |
| 63 | Request deployment to PRODUCTION | 2013-09-09 → 2013-09-23 (+14d) | 2013-09-09 → 2013-09-23 (+14d) |  |  |  | 53 → 61, 53 |  |
| 64 | Deploy to PRODUCTION | 2013-09-10 → 2013-09-24 (+14d) | 2013-09-12 → 2013-09-24 (+12d) | 3d → 1d |  |  |  |  |
| 65 | Update product landing page | 2013-09-13 → 2013-09-25 (+12d) | 2013-09-13 → 2013-09-25 (+12d) |  |  | 0.5d → 1.5d |  |  |
| 66 | QA smoke tests PRODUCTION | 2013-09-13 → 2013-09-25 (+12d) | 2013-09-13 → 2013-09-26 (+13d) | 1d → 2d |  |  |  |  |
| 67 | MILESTONE: RELEASE 1.4.1 | 2013-09-13 → 2013-09-26 (+13d) | 2013-09-13 → 2013-09-26 (+13d) |  |  |  |  |  |
| 112 | **User Support (as needed)** |  | 2014-01-03 → 2014-01-16 (+13d) | 248d → 257d |  |  |  |  |
| 114 | Support 1.4.1 | 2013-09-16 → 2013-09-27 (+11d) | 2014-01-03 → 2014-01-16 (+13d) |  |  |  |  |  |

## Version 18 (saved 2013-10-23)

Note of the change: Updated to reflect current work for 1.4.2

Last finish stays 2014-01-16. Complete tasks 46 → 101.

Added:

| ID | Task | Duration | Start | Finish | Predecessors | Constraint | Resources |
| --- | --- | --- | --- | --- | --- | --- | --- |
| 71 | **Iteration 0** | 10d | 2013-04-24 A | 2013-05-07 A |  |  |  |
| 72 | CAINT-1279: Improve Memory Usage of study deployments | 10d | 2013-04-24 A | 2013-05-07 A |  | start no earlier than 2013-04-24 | Abe |
| 73 | CAINT-1280: Work with Jill to update the Gene search documentation | 10d | 2013-04-24 A | 2013-05-07 A |  | start no earlier than 2013-04-24 | Abe |
| 74 | CAINT-1281: Fix QA's UPT | 10d | 2013-04-24 A | 2013-05-07 A |  | start no earlier than 2013-04-24 | Abe |
| 75 | **Iteration 1** | 10d | 2013-06-05 A | 2013-06-18 A |  |  |  |
| 76 | CAINT-63: Performance issues with multiple users during study deletion | 10d | 2013-06-05 A | 2013-06-18 A |  |  | Abe |
| 77 | CAINT-73: Large Clinical Data files take too long between annotation definition assignment | 10d | 2013-06-05 A | 2013-06-18 A |  |  | Abe |
| 78 | CAINT-1221: Remove usage of struts dojo javascript from application | 10d | 2013-06-05 A | 2013-06-18 A |  |  | Abe |
| 79 | CAINT-1235: Perform performance analysis of system with the large data set | 10d | 2013-06-05 A | 2013-06-18 A |  |  | Abe |
| 80 | CAINT-1301: Upgrade to EhCache 2.6.6 | 10d | 2013-06-05 A | 2013-06-18 A |  |  | Abe |
| 81 | **Iteration 2** | 10d | 2013-06-19 A | 2013-07-02 A | 75 |  |  |
| 82 | CAINT-1246: Upgrading using the linux command line upgrade.properties file fails with invalid database type | 10d | 2013-06-19 A | 2013-07-02 A |  |  | Abe |
| 83 | CAINT-1300: Acquire and set up a new CI Server | 10d | 2013-06-19 A | 2013-07-02 A |  |  | Abe |
| 84 | CAINT-1307: Track down current NCI tech stack to determine upgrade path | 10d | 2013-06-19 A | 2013-07-02 A |  |  | Abe |
| 85 | CAINT-1309: Gather performance numbers for application post performance updates | 10d | 2013-06-19 A | 2013-07-02 A |  |  | Abe |
| 86 | CAINT-1312: Remove tutorial videos from the application | 10d | 2013-06-19 A | 2013-07-02 A |  |  | Abe |
| 87 | **Iteration 3** | 10d | 2013-07-03 A | 2013-07-16 A | 81 |  |  |
| 88 | CAINT-1242: Upgrade to latest version of the Spring Framework | 10d | 2013-07-03 A | 2013-07-16 A |  |  | Abe |
| 89 | CAINT-1313: Fix broken Integration tests | 10d | 2013-07-03 A | 2013-07-16 A |  |  | Abe |
| 90 | CAINT-1314: Create Tech Stack Wiki Page for application | 10d | 2013-07-03 A | 2013-07-16 A |  |  | Abe |
| 91 | CAINT-1315: Agregate Performance Numbers and add to wiki | 10d | 2013-07-03 A | 2013-07-16 A |  |  | Abe |
| 92 | CAINT-1316: Unable to deploy Affymetrix copy number platform | 10d | 2013-07-03 A | 2013-07-16 A |  |  | Abe |
| 93 | CAINT-1317: Deployment of copy number study results in duplicate samples | 10d | 2013-07-03 A | 2013-07-16 A |  |  | Abe |
| 94 | **Iteration 4** | 10d | 2013-07-17 A | 2013-07-30 A | 87 |  |  |
| 95 | CAINT-1319: Upgraded to latest Struts Version | 10d | 2013-07-17 A | 2013-07-30 A |  |  | Abe |
| 96 | CAINT-1320: Upgraded from Tiles 2.2.x to Tiles 3.x | 10d | 2013-07-17 A | 2013-07-30 A |  |  | Abe |
| 97 | CAINT-1321: Determine cause of performance drop for Agilent Data Set | 10d | 2013-07-17 A | 2013-07-30 A |  |  | Abe |
| 98 | CAINT-1324: HTTP Status 404 error when hit login link on the Register page | 10d | 2013-07-17 A | 2013-07-30 A |  |  | Abe |
| 99 | CAINT-1325: Unable to add authorization groups via the UI | 10d | 2013-07-17 A | 2013-07-30 A |  |  | Abe |
| 100 | **Iteration 5** | 10d | 2013-07-31 A | 2013-08-13 A | 94 |  |  |
| 101 | CAINT-1216: Re-Enable study authorization in Integration tests | 10d | 2013-07-31 A | 2013-08-13 A |  |  | Abe |
| 102 | CAINT-1274: Take a closer look at the NCIA Integration Tests | 10d | 2013-07-31 A | 2013-08-13 A |  |  | Abe |
| 103 | CAINT-1318: Re-enable testRunGistic in GenePatternGrinRunnerImplTestIntegration once cause of failure has been determined and fixed | 10d | 2013-07-31 A | 2013-08-13 A |  |  | Abe |
| 104 | CAINT-1327: Copy and Disable study functions are not working | 10d | 2013-07-31 A | 2013-08-13 A |  |  | Abe |
| 105 | CAINT-1328: Endless processing study status if deploy copy number study using caDnaCopy Service: http://ncias-d227-v.nci.nih.gov:8080/wsrf/services/cagrid/CaDNAcopy | 10d | 2013-07-31 A | 2013-08-13 A |  |  | Abe |
| 106 | **Iteration 6** | 10d | 2013-08-14 A | 2013-08-27 A | 100 |  |  |
| 107 | CAINT-1290: Endless Processing status when creating Mapping500K.na30 platform with Mapping250K_Nsp and Mapping250K_Sty designs on the local copy | 10d | 2013-08-14 A | 2013-08-27 A |  |  | Abe |
| 108 | CAINT-1329: Local installation under Windows 7 using GUI failed due to error: C:\Program Files\caintegrator\Uninstaller\uninstaller.jar (The system can't find the path specified) | 10d | 2013-08-14 A | 2013-08-27 A |  |  | Abe |
| 109 | CAINT-1331: Copy and Disable study functions are not working on the local copy of the caIntegrator | 10d | 2013-08-14 A | 2013-08-27 A |  |  | Abe |
| 110 | CAINT-1332: Windows GUI install fails due to circular property reference | 10d | 2013-08-14 A | 2013-08-27 A |  |  | Abe |
| 111 | **Iteration 7** | 10d | 2013-08-28 A | 2013-09-10 A | 106 |  |  |
| 112 | CAINT-1153: reduce CI build time | 10d | 2013-08-28 A | 2013-09-10 A |  |  | Abe |
| 113 | CAINT-1218: Improve performance of the Integration tests | 10d | 2013-08-28 A | 2013-09-10 A |  |  | Abe |
| 114 | CAINT-1330: Bioconductor server can only handle 2 simultaneous calls at once | 10d | 2013-08-28 A | 2013-09-10 A |  |  | Abe |
| 115 | **Iteration 8** | 10d? | 2013-09-11 A | 2013-09-24 A | 111 |  |  |
| 116 | CAINT-1290: Endless Processing status when creating Mapping500K.na30 platform with Mapping250K_Nsp and Mapping250K_Sty designs on the local copy | 10d | 2013-09-11 A | 2013-09-24 A |  |  | Abe |
| 117 | CAINT-1299: GUI Upgrader v1.4.1 doesn't upgrade the application version/build number | 10d | 2013-09-11 A | 2013-09-24 A |  |  | Abe |
| 118 | CAINT-1304: When install caIntegrator locally and open the application for the first time, - user see the red message: You are seeing this page because your session has timed out | 10d | 2013-09-11 A | 2013-09-24 A |  |  | Abe |
| 119 | CAINT-1306: Upgrade caIntegrator by using command line on window failed | 10d | 2013-09-11 A | 2013-09-24 A |  |  | Abe |
| 120 | CAINT-1326: When open freshly deployed application on QA, will see the message : You are seeing this page because your session has timed out | 10d | 2013-09-11 A | 2013-09-24 A |  |  | Abe |
| 121 | CAINT-1331: Copy and Disable study functions are not working on the local copy of the caIntegrator | 10d | 2013-09-11 A | 2013-09-24 A |  |  | Abe |
| 122 | CAINT-1333: Update page footer | 1d? | 2013-09-11 A | 2013-09-11 A |  |  | Abe |
| 123 | **RC 1** | 13d | 2013-09-25 A | 2013-10-11 A | 115 |  |  |
| 124 | CAINT-1293: If user have a number of saved gene lists - it is not possible to see all of them properly in FF and IE | 13d | 2013-09-25 A | 2013-10-11 A |  |  | Abe |
| 125 | CAINT-1305: If install locally with SSO option and try logout from caIntegrator user may see the connection problem | 13d | 2013-09-25 A | 2013-10-11 A |  |  | Abe |
| 126 | CAINT-1328: Endless processing study status if deploy copy number study using caDnaCopy Service: http://ncias-d227-v.nci.nih.gov:8080/wsrf/services/cagrid/CaDNAcopy | 13d | 2013-09-25 A | 2013-10-11 A |  |  | Abe |
| 127 | CAINT-1334: Non consistent error: Unauthorized access during study creation | 13d | 2013-09-25 A | 2013-10-11 A |  |  | Abe |
| 129 | HOLD - Government Shutdown | 13d | 2013-10-01 | 2013-10-17 |  | finish no earlier than 2013-10-17 |  |
| 130 | Create test plan | 5d | 2013-10-18 | 2013-10-24 | 129 |  | Marina |
| 140 | Create QA Test Summary Report | 3d | 2013-11-07 | 2013-11-11 | 139 |  | Marina |

Removed: 71 Improve performance; 72 Development; 73 QA; 74 Upgrade Tech Stack Components; 75 Upgrade Spring; 76 Upgrade Struts & Tiles; 77 Upgrade CSM/UPT; 78 Address TRANSCEND Issues; 79 Development; 80 QA; 81 MILESTONE: EPLC REVIEW (as needed)

Changed:

| ID | Task | Start | Finish | Duration | Complete | Total float | Predecessors | Other |
| --- | --- | --- | --- | --- | --- | --- | --- | --- |
| 1 | **caIntegrator** | 2012-12-03 A → 2012-12-06 A (+3d) | 2013-11-15 → 2013-12-23 (+38d) | 250d? → 273d? | 64% → 88% | 44d → 18d |  |  |
| 7 | **caIntegrator 1.4.1** |  | 2013-09-26 A |  | 94% → 100% | 80d → none |  |  |
| 32 | **QA Tier** |  | 2013-09-16 A |  | 98% → 100% | 88d → none |  |  |
| 43 | Run security appscan |  |  |  |  |  | 44, 45, 41 → 44, 45 |  |
| 44 | Test local install |  |  |  |  |  | 41, 40 → 41 |  |
| 45 | Test local upgrade |  |  |  |  |  | 44, 40 → 44 |  |
| 50 | Create the Test Plan for STAGE and update the test report for QA |  |  |  |  |  | 41, 42, 43, 44, 46, 45 → 41, 42, 43, 44, 46 |  |
| 53 | Approval to deploy to STAGE |  |  |  |  |  | 52, 50 → 52 |  |
| 54 | Create release artifacts | 2013-09-13 A | 2013-09-16 A |  | 0% → 100% | 88d → none |  |  |
| 56 | **STAGE Tier** |  | 2013-09-23 A |  | 20% → 100% | 83d → none |  |  |
| 59 | Smoke test | 2013-09-17 A | 2013-09-18 A |  | 0% → 100% | 0d → none |  |  |
| 60 | Create QA Test Summary Report | 2013-09-19 A | 2013-09-23 A |  | 0% → 100% | 83d → none |  |  |
| 61 | Test Results Review and Reporting | 2013-09-19 A | 2013-09-23 A |  | 0% → 100% | 0d → none |  |  |
| 62 | **PRODUCTION** | 2013-09-23 A | 2013-09-26 A |  | 0% → 100% | 0d → none |  |  |
| 63 | Request deployment to PRODUCTION | 2013-09-23 A | 2013-09-23 A |  | 0% → 100% | 0d → none |  |  |
| 64 | Deploy to PRODUCTION | 2013-09-24 A | 2013-09-24 A |  | 0% → 100% | 0d → none |  |  |
| 65 | Update product landing page | 2013-09-25 A | 2013-09-25 A |  | 0% → 100% | 1.5d → none |  |  |
| 66 | QA smoke tests PRODUCTION | 2013-09-25 A | 2013-09-26 A |  | 0% → 100% | 0d → none |  |  |
| 67 | MILESTONE: RELEASE 1.4.1 | 2013-09-26 A | 2013-09-26 A |  | 0% → 100% | 0d → none |  |  |
| 68 | **caIntegrator 1.4.2** | 2012-12-03 A → 2013-04-24 A (+142d) | 2013-11-15 → 2013-12-23 (+38d) | 250d? → 174d? | 37% → 86% | 44d → 18d |  |  |
| 70 | **Development** | 2012-12-03 A → 2013-04-24 A (+142d) | 2013-09-26 → 2013-10-29 (+33d) | 214d → 135d? | 51% → 96% | 80d → 57d |  |  |
| 128 | Cut release candidate | 2013-09-23 → 2013-10-11 (+18d) | 2013-09-23 → 2013-10-11 (+18d) |  |  | 34d → 69d | Improve performance, Upgrade Tech Stack Components, Upgrade CSM/UPT, Address TRANSCEND Issues → 123 |  |
| 131 | Request approval to deploy to QA | 2013-09-23 → 2013-10-24 (+31d) | 2013-09-23 → 2013-10-24 (+31d) |  |  | 34d → 8d | 128 → 130, 128 |  |
| 132 | DEV test results and QA Test Plan review | 2013-09-24 → 2013-10-25 (+31d) | 2013-09-26 → 2013-10-29 (+33d) |  |  | 25d → 8d |  | was named Test Results Review and Reporting |
| 133 | Approval to deploy to QA | 2013-09-26 → 2013-10-29 (+33d) | 2013-09-26 → 2013-10-29 (+33d) |  |  | 25d → 8d |  |  |
| 134 | **QA Tier** | 2013-09-27 → 2013-10-30 (+33d) | 2013-10-11 → 2013-11-18 (+38d) | 11d? → 14d? |  | 34d → 8d |  |  |
| 135 | Deploy to QA tier | 2013-09-27 → 2013-10-30 (+33d) | 2013-09-27 → 2013-10-30 (+33d) |  |  | 25d → 8d |  | resources none → Systems* |
| 136 | Regression Testing on QA tier | 2013-09-30 → 2013-10-31 (+31d) | 2013-10-04 → 2013-11-06 (+33d) |  |  | 61d → 45d |  |  |
| 137 | Installer Testing | 2013-10-07 → 2013-11-07 (+31d) | 2013-10-10 → 2013-11-12 (+33d) |  |  | 61d → 45d |  |  |
| 138 | Section 508 testing on QA tier | 2013-09-30 → 2013-11-13 (+44d) | 2013-10-01 → 2013-11-14 (+44d) |  |  | 68d → 45d | 135 → 137 | resources Mike → Marina |
| 139 | Appscan on QA tier | 2013-09-30 → 2013-10-31 (+31d) | 2013-10-04 → 2013-11-06 (+33d) |  |  | 25d → 8d |  |  |
| 141 | Request approval to deploy to STAGE | 2013-10-04 → 2013-11-11 (+38d) | 2013-10-04 → 2013-11-11 (+38d) |  |  | 34d → 8d | 139 → 140, 139 |  |
| 142 | QA Test Results Review | 2013-10-07 → 2013-11-12 (+36d) | 2013-10-09 → 2013-11-14 (+36d) |  |  | 25d → 8d |  | was named Test Results Review and Reporting |
| 143 | Approval to deploy to STAGE | 2013-10-09 → 2013-11-14 (+36d) | 2013-10-09 → 2013-11-14 (+36d) |  |  | 34d → 8d |  |  |
| 144 | Create release artifacts | 2013-10-10 → 2013-11-15 (+36d) | 2013-10-11 → 2013-11-18 (+38d) |  |  | 60d → 43d |  |  |
| 145 | **STAGE Tier** | 2013-10-09 → 2013-11-14 (+36d) | 2013-11-08 → 2013-12-16 (+38d) |  |  | 34d → 8d |  |  |
| 146 | Request deployment to STAGE | 2013-10-09 → 2013-11-14 (+36d) | 2013-10-09 → 2013-11-14 (+36d) |  |  | 25d → 8d |  | resources Marina; Mike → JJ |
| 147 | Deploy to STAGE | 2013-10-10 → 2013-11-15 (+36d) | 2013-10-14 → 2013-11-19 (+36d) |  |  | 25d → 8d |  |  |
| 148 | Smoke test | 2013-10-15 → 2013-11-20 (+36d) | 2013-10-17 → 2013-11-22 (+36d) |  |  | 25d → 8d |  |  |
| 149 | Request security appscan | 2013-10-17 → 2013-11-22 (+36d) | 2013-10-17 → 2013-11-22 (+36d) |  |  | 34d → 8d |  |  |
| 150 | Run security appscan | 2013-10-18 → 2013-11-25 (+38d) | 2013-10-31 → 2013-12-06 (+36d) |  |  | 25d → 8d |  |  |
| 151 | Create QA Test Summary Report | 2013-11-01 → 2013-12-09 (+38d) | 2013-11-05 → 2013-12-11 (+36d) |  |  | 25d → 8d |  |  |
| 152 | Request approval to deploy to PROD | 2013-11-05 → 2013-12-11 (+36d) | 2013-11-05 → 2013-12-11 (+36d) |  |  | 34d → 8d |  |  |
| 153 | Test Results Review and Reporting | 2013-11-06 → 2013-12-12 (+36d) | 2013-11-08 → 2013-12-16 (+38d) |  |  | 25d → 8d |  |  |
| 154 | Approval to deploy to PROD | 2013-11-08 → 2013-12-16 (+38d) | 2013-11-08 → 2013-12-16 (+38d) |  |  | 25d → 8d |  |  |
| 155 | **PRODUCTION** | 2013-11-11 → 2013-12-17 (+36d) | 2013-11-15 → 2013-12-23 (+38d) |  |  | 34d → 8d |  |  |
| 156 | Request deployment to PRODUCTION | 2013-11-11 → 2013-12-17 (+36d) | 2013-11-11 → 2013-12-17 (+36d) |  |  | 25d → 8d |  |  |
| 157 | Deploy to PRODUCTION | 2013-11-12 → 2013-12-18 (+36d) | 2013-11-14 → 2013-12-20 (+36d) |  |  | 25d → 8d |  |  |
| 158 | Update product landing page | 2013-11-15 → 2013-12-23 (+38d) | 2013-11-15 → 2013-12-23 (+38d) |  |  | 25.5d → 8.5d |  |  |
| 159 | QA smoke tests PRODUCTION | 2013-11-15 → 2013-12-23 (+38d) | 2013-11-15 → 2013-12-23 (+38d) |  |  | 25d → 8d |  |  |
| 160 | MILESTONE: RELEASE 1.4.2 | 2013-11-15 → 2013-12-23 (+38d) | 2013-11-15 → 2013-12-23 (+38d) |  |  | 34d → 8d |  |  |
| 164 | Support 1.4.2 | 2013-11-18 → 2013-12-24 (+36d) | 2013-11-29 → 2014-01-06 (+38d) |  |  | 25d → 8d |  |  |

## Version 19 (saved 2013-10-29)

Note of the change: Updates for the status meeting

Last finish stays 2014-01-16. Complete tasks 101 → 103.

Changed:

| ID | Task | Start | Finish | Duration | Complete | Total float | Predecessors |
| --- | --- | --- | --- | --- | --- | --- | --- |
| 1 | **caIntegrator** |  | 2013-12-23 → 2013-12-30 (+7d) | 273d? → 278d? | 88% → 90% | 18d → 13d |  |
| 63 | Request deployment to PRODUCTION |  |  |  |  |  | 61, 53 → 61 |
| 68 | **caIntegrator 1.4.2** |  | 2013-12-23 → 2013-12-30 (+7d) | 174d? → 179d? | 86% → 89% | 18d → 13d |  |
| 70 | **Development** |  | 2013-10-29 → 2013-11-05 (+7d) | 135d? → 140d? | 96% → 99% | 57d → 3d |  |
| 128 | Cut release candidate | 2013-10-11 A | 2013-10-11 A |  | 0% → 100% | 69d → none |  |
| 129 | HOLD - Government Shutdown | 2013-10-01 A | 2013-10-17 A |  | 0% → 100% | 8d → none |  |
| 130 | Create test plan | 2013-10-18 A | 2013-10-24 → 2013-10-31 (+7d) | 5d → 10d | 0% → 75% | 8d → 3d |  |
| 131 | Request approval to deploy to QA | 2013-10-24 → 2013-10-31 (+7d) | 2013-10-24 → 2013-10-31 (+7d) |  |  | 8d → 3d | 130, 128 → 130 |
| 132 | DEV test results and QA Test Plan review | 2013-10-25 → 2013-11-01 (+7d) | 2013-10-29 → 2013-11-05 (+7d) |  |  | 8d → 3d |  |
| 133 | Approval to deploy to QA | 2013-10-29 → 2013-11-05 (+7d) | 2013-10-29 → 2013-11-05 (+7d) |  |  | 8d → 3d |  |
| 134 | **QA Tier** | 2013-10-30 → 2013-11-06 (+7d) | 2013-11-18 → 2013-11-25 (+7d) |  |  | 8d → 3d |  |
| 135 | Deploy to QA tier | 2013-10-30 → 2013-11-06 (+7d) | 2013-10-30 → 2013-11-06 (+7d) |  |  | 8d → 3d |  |
| 136 | Regression Testing on QA tier | 2013-10-31 → 2013-11-07 (+7d) | 2013-11-06 → 2013-11-13 (+7d) |  |  | 45d → 40d |  |
| 137 | Installer Testing | 2013-11-07 → 2013-11-14 (+7d) | 2013-11-12 → 2013-11-19 (+7d) |  |  | 45d → 40d |  |
| 138 | Section 508 testing on QA tier | 2013-11-13 → 2013-11-20 (+7d) | 2013-11-14 → 2013-11-21 (+7d) |  |  | 45d → 40d |  |
| 139 | Appscan on QA tier | 2013-10-31 → 2013-11-07 (+7d) | 2013-11-06 → 2013-11-13 (+7d) |  |  | 8d → 3d |  |
| 140 | Create QA Test Summary Report | 2013-11-07 → 2013-11-14 (+7d) | 2013-11-11 → 2013-11-18 (+7d) |  |  | 8d → 3d |  |
| 141 | Request approval to deploy to STAGE | 2013-11-11 → 2013-11-18 (+7d) | 2013-11-11 → 2013-11-18 (+7d) |  |  | 8d → 3d | 140, 139 → 140 |
| 142 | QA Test Results Review | 2013-11-12 → 2013-11-19 (+7d) | 2013-11-14 → 2013-11-21 (+7d) |  |  | 8d → 3d |  |
| 143 | Approval to deploy to STAGE | 2013-11-14 → 2013-11-21 (+7d) | 2013-11-14 → 2013-11-21 (+7d) |  |  | 8d → 3d |  |
| 144 | Create release artifacts | 2013-11-15 → 2013-11-22 (+7d) | 2013-11-18 → 2013-11-25 (+7d) |  |  | 43d → 38d |  |
| 145 | **STAGE Tier** | 2013-11-14 → 2013-11-21 (+7d) | 2013-12-16 → 2013-12-23 (+7d) |  |  | 8d → 3d |  |
| 146 | Request deployment to STAGE | 2013-11-14 → 2013-11-21 (+7d) | 2013-11-14 → 2013-11-21 (+7d) |  |  | 8d → 3d |  |
| 147 | Deploy to STAGE | 2013-11-15 → 2013-11-22 (+7d) | 2013-11-19 → 2013-11-26 (+7d) |  |  | 8d → 3d |  |
| 148 | Smoke test | 2013-11-20 → 2013-11-27 (+7d) | 2013-11-22 → 2013-11-29 (+7d) |  |  | 8d → 3d |  |
| 149 | Request security appscan | 2013-11-22 → 2013-11-29 (+7d) | 2013-11-22 → 2013-11-29 (+7d) |  |  | 8d → 3d |  |
| 150 | Run security appscan | 2013-11-25 → 2013-12-02 (+7d) | 2013-12-06 → 2013-12-13 (+7d) |  |  | 8d → 3d |  |
| 151 | Create QA Test Summary Report | 2013-12-09 → 2013-12-16 (+7d) | 2013-12-11 → 2013-12-18 (+7d) |  |  | 8d → 3d |  |
| 152 | Request approval to deploy to PROD | 2013-12-11 → 2013-12-18 (+7d) | 2013-12-11 → 2013-12-18 (+7d) |  |  | 8d → 3d |  |
| 153 | Test Results Review and Reporting | 2013-12-12 → 2013-12-19 (+7d) | 2013-12-16 → 2013-12-23 (+7d) |  |  | 8d → 3d |  |
| 154 | Approval to deploy to PROD | 2013-12-16 → 2013-12-23 (+7d) | 2013-12-16 → 2013-12-23 (+7d) |  |  | 8d → 3d |  |
| 155 | **PRODUCTION** | 2013-12-17 → 2013-12-24 (+7d) | 2013-12-23 → 2013-12-30 (+7d) |  |  | 8d → 3d |  |
| 156 | Request deployment to PRODUCTION | 2013-12-17 → 2013-12-24 (+7d) | 2013-12-17 → 2013-12-24 (+7d) |  |  | 8d → 3d |  |
| 157 | Deploy to PRODUCTION | 2013-12-18 → 2013-12-25 (+7d) | 2013-12-20 → 2013-12-27 (+7d) |  |  | 8d → 3d |  |
| 158 | Update product landing page | 2013-12-23 → 2013-12-30 (+7d) | 2013-12-23 → 2013-12-30 (+7d) |  |  | 8.5d → 3.5d |  |
| 159 | QA smoke tests PRODUCTION | 2013-12-23 → 2013-12-30 (+7d) | 2013-12-23 → 2013-12-30 (+7d) |  |  | 8d → 3d |  |
| 160 | MILESTONE: RELEASE 1.4.2 | 2013-12-23 → 2013-12-30 (+7d) | 2013-12-23 → 2013-12-30 (+7d) |  |  | 8d → 3d |  |
| 164 | Support 1.4.2 | 2013-12-24 → 2013-12-31 (+7d) | 2014-01-06 → 2014-01-13 (+7d) |  |  | 8d → 3d |  |

## Version 20 (saved 2013-10-31)

Note of the change: Added holidays

Last finish 2014-01-16 → 2014-01-22 (+6d).

Changed:

| ID | Task | Start | Finish |
| --- | --- | --- | --- |
| 1 | **caIntegrator** |  | 2013-12-30 → 2014-01-03 (+4d) |
| 68 | **caIntegrator 1.4.2** |  | 2013-12-30 → 2014-01-03 (+4d) |
| 145 | **STAGE Tier** |  | 2013-12-23 → 2013-12-26 (+3d) |
| 148 | Smoke test |  | 2013-11-29 → 2013-12-03 (+4d) |
| 149 | Request security appscan | 2013-11-29 → 2013-12-03 (+4d) | 2013-11-29 → 2013-12-03 (+4d) |
| 150 | Run security appscan | 2013-12-02 → 2013-12-04 (+2d) | 2013-12-13 → 2013-12-17 (+4d) |
| 151 | Create QA Test Summary Report | 2013-12-16 → 2013-12-18 (+2d) | 2013-12-18 → 2013-12-20 (+2d) |
| 152 | Request approval to deploy to PROD | 2013-12-18 → 2013-12-20 (+2d) | 2013-12-18 → 2013-12-20 (+2d) |
| 153 | Test Results Review and Reporting | 2013-12-19 → 2013-12-23 (+4d) | 2013-12-23 → 2013-12-26 (+3d) |
| 154 | Approval to deploy to PROD | 2013-12-23 → 2013-12-26 (+3d) | 2013-12-23 → 2013-12-26 (+3d) |
| 155 | **PRODUCTION** | 2013-12-24 → 2013-12-27 (+3d) | 2013-12-30 → 2014-01-03 (+4d) |
| 156 | Request deployment to PRODUCTION | 2013-12-24 → 2013-12-27 (+3d) | 2013-12-24 → 2013-12-27 (+3d) |
| 157 | Deploy to PRODUCTION | 2013-12-25 → 2013-12-30 (+5d) | 2013-12-27 → 2014-01-02 (+6d) |
| 158 | Update product landing page | 2013-12-30 → 2014-01-03 (+4d) | 2013-12-30 → 2014-01-03 (+4d) |
| 159 | QA smoke tests PRODUCTION | 2013-12-30 → 2014-01-03 (+4d) | 2013-12-30 → 2014-01-03 (+4d) |
| 160 | MILESTONE: RELEASE 1.4.2 | 2013-12-30 → 2014-01-03 (+4d) | 2013-12-30 → 2014-01-03 (+4d) |
| 161 | **User Support (as needed)** |  | 2014-01-16 → 2014-01-22 (+6d) |
| 162 | Support 1.4.0.1 |  | 2013-11-29 → 2013-12-03 (+4d) |
| 163 | Support 1.4.1 |  | 2014-01-16 → 2014-01-22 (+6d) |
| 164 | Support 1.4.2 | 2013-12-31 → 2014-01-06 (+6d) | 2014-01-13 → 2014-01-17 (+4d) |

## Version 21 (saved 2013-11-25)

Note of the change: updated project plan with updated QA plan

Last finish 2014-01-22 → 2014-02-03 (+12d). Complete tasks 103 → 107.

Added:

| ID | Task | Duration | Start | Finish | Predecessors | Constraint | Resources |
| --- | --- | --- | --- | --- | --- | --- | --- |
| 134 | RC 2 | 6d | 2013-11-19 | 2013-11-26 |  | start no earlier than 2013-11-19 | Eric |
| 139 | Performance Testing | 1d | 2013-12-09 | 2013-12-09 | 137 |  | Eric |
| 152 | Verify TRANSCEND Document Feedback | 1d? | 2013-12-26 | 2013-12-26 | 151 |  |  |

Changed:

| ID | Task | Start | Finish | Duration | Complete | Total float | Predecessors | Other |
| --- | --- | --- | --- | --- | --- | --- | --- | --- |
| 1 | **caIntegrator** |  | 2014-01-03 → 2014-01-20 (+17d) | 278d? → 289d? |  | 13d → 10d |  |  |
| 68 | **caIntegrator 1.4.2** |  | 2014-01-03 → 2014-01-20 (+17d) | 179d? → 190d? |  | 13d → 10d |  |  |
| 70 | **Development** |  | 2013-11-05 → 2013-11-26 (+21d) | 140d? → 155d? |  | 3d → 0d |  |  |
| 130 | Create test plan |  | 2013-10-31 A |  | 75% → 100% | 3d → none |  |  |
| 131 | Request approval to deploy to QA | 2013-10-31 A | 2013-10-31 A |  | 0% → 100% | 3d → none |  |  |
| 132 | DEV test results and QA Test Plan review | 2013-11-01 A | 2013-11-05 A |  | 0% → 100% | 3d → none |  |  |
| 133 | Approval to deploy to QA | 2013-11-05 A | 2013-11-05 A |  | 0% → 100% | 3d → none |  |  |
| 135 | **QA Tier** | 2013-11-06 → 2013-11-27 (+21d) | 2013-11-25 → 2013-12-18 (+23d) | 14d? → 14d |  | 3d → 0d | none → 134 |  |
| 136 | Deploy to QA tier | 2013-11-06 → 2013-11-27 (+21d) | 2013-11-06 → 2013-11-27 (+21d) | 1d? → 1d |  | 3d → 0d | 133 → 134 |  |
| 137 | Regression Testing on QA tier | 2013-11-07 → 2013-12-02 (+25d) | 2013-11-13 → 2013-12-06 (+23d) |  |  | 40d → 35d |  |  |
| 138 | Installer Testing | 2013-11-14 → 2013-12-09 (+25d) | 2013-11-19 → 2013-12-12 (+23d) |  |  | 40d → 35d |  |  |
| 140 | Section 508 testing on QA tier | 2013-11-20 → 2013-12-13 (+23d) | 2013-11-21 → 2013-12-16 (+25d) |  |  | 40d → 33d |  |  |
| 141 | Appscan on QA tier | 2013-11-07 → 2013-12-02 (+25d) | 2013-11-13 → 2013-12-06 (+23d) |  |  | 3d → 0d |  |  |
| 142 | Create QA Test Summary Report | 2013-11-14 → 2013-12-09 (+25d) | 2013-11-18 → 2013-12-11 (+23d) |  |  | 3d → 0d |  |  |
| 143 | Request approval to deploy to STAGE | 2013-11-18 → 2013-12-11 (+23d) | 2013-11-18 → 2013-12-11 (+23d) |  |  | 3d → 0d |  |  |
| 144 | QA Test Results Review | 2013-11-19 → 2013-12-12 (+23d) | 2013-11-21 → 2013-12-16 (+25d) |  |  | 3d → 0d |  |  |
| 145 | Approval to deploy to STAGE | 2013-11-21 → 2013-12-16 (+25d) | 2013-11-21 → 2013-12-16 (+25d) |  |  | 3d → 0d |  |  |
| 146 | Create release artifacts | 2013-11-22 → 2013-12-17 (+25d) | 2013-11-25 → 2013-12-18 (+23d) |  |  | 38d → 31d |  | resources Mike; Abe → Eric; Todd |
| 147 | **STAGE Tier** | 2013-11-21 → 2013-12-16 (+25d) | 2013-12-26 → 2014-01-13 (+18d) | 22d → 18d? |  | 3d → 0d |  |  |
| 148 | Request deployment to STAGE | 2013-11-21 → 2013-12-16 (+25d) | 2013-11-21 → 2013-12-16 (+25d) |  |  | 3d → 0d |  |  |
| 149 | Deploy to STAGE | 2013-11-22 → 2013-12-17 (+25d) | 2013-11-26 → 2013-12-19 (+23d) |  |  | 3d → 0d |  |  |
| 150 | Smoke test | 2013-11-27 → 2013-12-20 (+23d) | 2013-12-03 → 2013-12-24 (+21d) |  |  | 3d → 0d |  |  |
| 151 | Request security appscan | 2013-12-03 → 2013-12-24 (+21d) | 2013-12-03 → 2013-12-24 (+21d) |  |  | 3d → 0d |  | resources Marina; Mike → Marina; Todd |
| 153 | Run security appscan | 2013-12-04 → 2013-12-27 (+23d) | 2013-12-17 → 2014-01-03 (+17d) | 10d → 5d |  | 3d → 0d | 151 → 152 |  |
| 154 | Create QA Test Summary Report | 2013-12-18 → 2014-01-06 (+19d) | 2013-12-20 → 2014-01-08 (+19d) |  |  | 3d → 0d |  |  |
| 155 | Request approval to deploy to PROD | 2013-12-20 → 2014-01-08 (+19d) | 2013-12-20 → 2014-01-08 (+19d) |  |  | 3d → 0d |  |  |
| 156 | Test Results Review and Reporting | 2013-12-23 → 2014-01-09 (+17d) | 2013-12-26 → 2014-01-13 (+18d) |  |  | 3d → 0d |  |  |
| 157 | Approval to deploy to PROD | 2013-12-26 → 2014-01-13 (+18d) | 2013-12-26 → 2014-01-13 (+18d) |  |  | 3d → 0d |  |  |
| 158 | **PRODUCTION** | 2013-12-27 → 2014-01-14 (+18d) | 2014-01-03 → 2014-01-20 (+17d) |  |  | 3d → 0d |  |  |
| 159 | Request deployment to PRODUCTION | 2013-12-27 → 2014-01-14 (+18d) | 2013-12-27 → 2014-01-14 (+18d) |  |  | 3d → 0d |  |  |
| 160 | Deploy to PRODUCTION | 2013-12-30 → 2014-01-15 (+16d) | 2014-01-02 → 2014-01-17 (+15d) |  |  | 3d → 0d |  |  |
| 161 | Update product landing page | 2014-01-03 → 2014-01-20 (+17d) | 2014-01-03 → 2014-01-20 (+17d) |  |  | 3.5d → 0.5d |  |  |
| 162 | QA smoke tests PRODUCTION | 2014-01-03 → 2014-01-20 (+17d) | 2014-01-03 → 2014-01-20 (+17d) |  |  | 3d → 0d |  |  |
| 163 | MILESTONE: RELEASE 1.4.2 | 2014-01-03 → 2014-01-20 (+17d) | 2014-01-03 → 2014-01-20 (+17d) |  |  | 3d → 0d |  |  |
| 164 | **User Support (as needed)** |  | 2014-01-22 → 2014-02-03 (+12d) | 257d → 265d |  |  |  |  |
| 165 | Support 1.4.0.1 |  |  |  |  | 34d → 42d |  | resources Abe → Eric |
| 166 | Support 1.4.1 |  |  |  |  | 0d → 8d |  | resources Abe → Eric |
| 167 | Support 1.4.2 | 2014-01-06 → 2014-01-21 (+15d) | 2014-01-17 → 2014-02-03 (+17d) |  |  | 3d → 0d |  | resources Abe → Eric |

## Version 22 (saved 2013-12-03)

Note of the change: closed out finished tasks

Last finish 2014-02-03 → 2014-02-14 (+11d). Complete tasks 107 → 114.

Changed:

| ID | Task | Start | Finish | Duration | Complete | Total float | Predecessors | Other |
| --- | --- | --- | --- | --- | --- | --- | --- | --- |
| 1 | **caIntegrator** |  | 2014-01-20 → 2014-01-31 (+11d) | 289d? → 298d? | 90% → 94% |  |  |  |
| 2 | **caIntegrator 1.4.01 - patch release** | 2013-01-02 A | 2013-01-22 A |  | 0% → 100% | 42d → none |  |  |
| 3 | Appscan on QA | 2013-01-02 A | 2013-01-09 A |  | 0% → 100% | 34d → none |  |  |
| 4 | Appscan on Stage | 2013-01-10 A | 2013-01-15 A |  | 0% → 100% | 34d → none |  |  |
| 5 | QA reports and Approval | 2013-01-16 A | 2013-01-17 A |  | 0% → 100% | 34d → none |  |  |
| 6 | Prod Release | 2013-01-18 A | 2013-01-22 A |  | 0% → 100% | 34d → none |  |  |
| 68 | **caIntegrator 1.4.2** |  | 2014-01-20 → 2014-01-31 (+11d) | 190d? → 199d? | 89% → 92% |  |  |  |
| 69 | Support for 1.4.1 | 2013-04-25 A | 2013-05-01 A |  | 0% → 100% | 186d → none |  |  |
| 70 | **Development** |  | 2013-11-26 A |  | 99% → 100% | 0d → none |  |  |
| 134 | RC 2 | 2013-11-19 A | 2013-11-26 A |  | 0% → 100% | 0d → none |  |  |
| 135 | **QA Tier** | 2013-11-27 A | 2013-12-18 → 2014-01-02 (+15d) | 14d → 23d | 0% → 14% | 0d → 31d |  |  |
| 136 | Deploy to QA tier | 2013-11-27 A | 2013-11-27 A |  | 0% → 100% | 0d → none |  |  |
| 137 | RC2 Performance Testing (occurs on DEV Tier) | 2013-12-09 → 2013-12-03 A (-6d) | 2013-12-09 → 2013-12-04 (-5d) | 1d → 2d | 0% → 50% | 38d → 50d |  | was named Performance Testing; constraint none → finish no earlier than 2012-12-04 |
| 138 | Regression Testing on QA tier | 2013-12-02 A |  |  | 0% → 33% | 35d → 0d |  |  |
| 141 | Appscan on QA tier | 2013-12-02 → 2013-12-13 (+11d) | 2013-12-06 → 2013-12-19 (+13d) |  |  |  | 136 → 139 |  |
| 142 | Create QA Test Summary Report | 2013-12-09 → 2013-12-20 (+11d) | 2013-12-11 → 2013-12-24 (+13d) |  |  |  |  |  |
| 143 | Request approval to deploy to STAGE | 2013-12-11 → 2013-12-24 (+13d) | 2013-12-11 → 2013-12-24 (+13d) |  |  |  |  |  |
| 144 | QA Test Report Review | 2013-12-12 → 2013-12-26 (+14d) | 2013-12-16 → 2013-12-30 (+14d) |  |  |  |  | was named QA Test Results Review |
| 145 | Approval to deploy to STAGE | 2013-12-16 → 2013-12-30 (+14d) | 2013-12-16 → 2013-12-30 (+14d) |  |  |  |  |  |
| 146 | Create release artifacts | 2013-12-17 → 2013-12-31 (+14d) | 2013-12-18 → 2014-01-02 (+15d) |  |  |  |  |  |
| 147 | **STAGE Tier** | 2013-12-16 → 2013-12-30 (+14d) | 2014-01-13 → 2014-01-24 (+11d) | 18d? → 18d |  |  |  |  |
| 148 | Request deployment to STAGE | 2013-12-16 → 2013-12-30 (+14d) | 2013-12-16 → 2013-12-30 (+14d) |  |  |  |  |  |
| 149 | Deploy to STAGE | 2013-12-17 → 2013-12-31 (+14d) | 2013-12-19 → 2014-01-03 (+15d) |  |  |  |  |  |
| 150 | Smoke test | 2013-12-20 → 2014-01-06 (+17d) | 2013-12-24 → 2014-01-08 (+15d) |  |  |  |  |  |
| 151 | Request security appscan | 2013-12-24 → 2014-01-08 (+15d) | 2013-12-24 → 2014-01-08 (+15d) |  |  | 0d → 27d |  |  |
| 152 | Verify TRANSCEND Document Feedback | 2013-12-26 → 2014-01-09 (+14d) | 2013-12-26 → 2014-01-09 (+14d) | 1d? → 1d |  |  | 151 → 150 |  |
| 153 | Run security appscan | 2013-12-27 → 2014-01-10 (+14d) | 2014-01-03 → 2014-01-16 (+13d) |  |  |  |  |  |
| 154 | Create QA Test Summary Report | 2014-01-06 → 2014-01-17 (+11d) | 2014-01-08 → 2014-01-21 (+13d) |  |  |  |  |  |
| 155 | Request approval to deploy to PROD | 2014-01-08 → 2014-01-21 (+13d) | 2014-01-08 → 2014-01-21 (+13d) |  |  |  |  |  |
| 156 | Test Results Review and Reporting | 2014-01-09 → 2014-01-22 (+13d) | 2014-01-13 → 2014-01-24 (+11d) |  |  |  |  |  |
| 157 | Approval to deploy to PROD | 2014-01-13 → 2014-01-24 (+11d) | 2014-01-13 → 2014-01-24 (+11d) |  |  |  |  |  |
| 158 | **PRODUCTION** | 2014-01-14 → 2014-01-27 (+13d) | 2014-01-20 → 2014-01-31 (+11d) |  |  |  |  |  |
| 159 | Request deployment to PRODUCTION | 2014-01-14 → 2014-01-27 (+13d) | 2014-01-14 → 2014-01-27 (+13d) |  |  |  |  |  |
| 160 | Deploy to PRODUCTION | 2014-01-15 → 2014-01-28 (+13d) | 2014-01-17 → 2014-01-30 (+13d) |  |  |  |  |  |
| 161 | Update product landing page | 2014-01-20 → 2014-01-31 (+11d) | 2014-01-20 → 2014-01-31 (+11d) |  |  |  |  |  |
| 162 | QA smoke tests PRODUCTION | 2014-01-20 → 2014-01-31 (+11d) | 2014-01-20 → 2014-01-31 (+11d) |  |  |  |  |  |
| 163 | MILESTONE: RELEASE 1.4.2 | 2014-01-20 → 2014-01-31 (+11d) | 2014-01-20 → 2014-01-31 (+11d) |  |  |  |  |  |
| 164 | **User Support (as needed)** |  | 2014-02-03 → 2014-02-14 (+11d) | 265d → 274d |  |  |  |  |
| 167 | Support 1.4.2 | 2014-01-21 → 2014-02-03 (+13d) | 2014-02-03 → 2014-02-14 (+11d) |  |  |  |  |  |

## Version 23 (saved 2013-12-12)

Note of the change: updated project plan

Last finish stays 2014-02-14. Complete tasks 114 → 116.

Changed:

| ID | Task | Start | Finish | Complete | Total float | Predecessors |
| --- | --- | --- | --- | --- | --- | --- |
| 1 | **caIntegrator** |  |  | 94% → 95% |  |  |
| 68 | **caIntegrator 1.4.2** |  |  | 92% → 93% |  |  |
| 135 | **QA Tier** |  |  | 14% → 42% |  | 134 → none |
| 137 | RC2 Performance Testing (occurs on DEV Tier) |  | 2013-12-04 A | 50% → 100% | 50d → none | 138 → none |
| 138 | Regression Testing on QA tier |  | 2013-12-06 A | 33% → 100% | 0d → none |  |
| 139 | Installer Testing | 2013-12-09 A |  | 0% → 85% |  |  |

## Version 24 (saved 2013-12-17)

Note of the change: updated with latest data

Last finish stays 2014-02-14. Complete tasks 116 → 117.

Changed:

| ID | Task | Start | Finish | Duration | Complete | Total float |
| --- | --- | --- | --- | --- | --- | --- |
| 135 | **QA Tier** |  |  |  | 42% → 46% |  |
| 140 | Section 508 testing on QA tier | 2013-12-13 A | 2013-12-16 → 2013-12-13 A (-3d) | 2d → 0d | 0% → 100% | 42d → none |

## Version 25 (saved 2013-12-24)

Note of the change: updated plan

Last finish stays 2014-02-14. Complete tasks 117 → 118.

Changed:

| ID | Task | Start | Finish | Complete | Total float |
| --- | --- | --- | --- | --- | --- |
| 1 | **caIntegrator** |  |  | 95% → 96% |  |
| 68 | **caIntegrator 1.4.2** |  |  | 93% → 94% |  |
| 135 | **QA Tier** |  |  | 46% → 66% |  |
| 139 | Installer Testing |  |  | 85% → 90% | 0d → 44d |
| 141 | Appscan on QA tier | 2013-12-13 A | 2013-12-19 A | 0% → 100% | 0d → none |

## Version 26 (saved 2014-01-21)

Note of the change: updated project plan

Last finish 2014-02-14 → 2014-02-28 (+14d). Complete tasks 118 → 119.

Changed:

| ID | Task | Start | Finish | Duration | Complete | Total float | Predecessors | Other |
| --- | --- | --- | --- | --- | --- | --- | --- | --- |
| 1 | **caIntegrator** |  | 2014-01-31 → 2014-02-14 (+14d) | 298d? → 308d? | 96% → 97% |  |  |  |
| 68 | **caIntegrator 1.4.2** |  | 2014-01-31 → 2014-02-14 (+14d) | 199d? → 209d? | 94% → 96% |  |  |  |
| 135 | **QA Tier** |  | 2014-01-02 → 2014-01-28 (+26d) | 23d → 41d | 66% → 68% | 31d → 29d |  |  |
| 139 | Installer Testing |  | 2013-12-12 A |  | 90% → 100% | 44d → none |  |  |
| 143 | Request approval to deploy to STAGE | 2013-12-24 → 2014-01-22 (+29d) | 2013-12-24 → 2014-01-22 (+29d) |  |  |  | 142 → none | constraint none → start no earlier than 2014-01-22 |
| 144 | QA Test Report Review | 2013-12-26 → 2014-01-22 (+27d) | 2013-12-30 → 2014-01-24 (+25d) |  |  |  |  |  |
| 145 | Approval to deploy to STAGE | 2013-12-30 → 2014-01-24 (+25d) | 2013-12-30 → 2014-01-24 (+25d) |  |  |  |  |  |
| 146 | Create release artifacts | 2013-12-31 → 2014-01-27 (+27d) | 2014-01-02 → 2014-01-28 (+26d) |  |  | 31d → 29d |  |  |
| 147 | **STAGE Tier** | 2013-12-30 → 2014-01-24 (+25d) | 2014-01-24 → 2014-02-10 (+17d) | 18d → 11d |  |  |  |  |
| 148 | Request deployment to STAGE | 2013-12-30 → 2014-01-24 (+25d) | 2013-12-30 → 2014-01-24 (+25d) |  |  |  |  |  |
| 149 | Deploy to STAGE | 2013-12-31 → 2014-01-27 (+27d) | 2014-01-03 → 2014-01-27 (+24d) | 3d → 1d |  |  |  |  |
| 150 | Smoke test | 2014-01-06 → 2014-01-28 (+22d) | 2014-01-08 → 2014-01-28 (+20d) | 3d → 1d |  |  |  |  |
| 151 | Request security appscan | 2014-01-08 → 2014-01-28 (+20d) | 2014-01-08 → 2014-01-28 (+20d) |  |  | 27d → 23d |  |  |
| 152 | Verify TRANSCEND Document Feedback | 2014-01-09 → 2014-01-28 (+19d) | 2014-01-09 → 2014-01-28 (+19d) | 1d → 0d |  |  |  |  |
| 153 | AppScan | 2014-01-10 → 2014-01-29 (+19d) | 2014-01-16 → 2014-02-04 (+19d) |  |  |  |  | was named Run security appscan |
| 154 | Create QA Test Summary Report | 2014-01-17 → 2014-02-05 (+19d) | 2014-01-21 → 2014-02-06 (+16d) | 3d → 2d |  |  |  |  |
| 155 | Request approval to deploy to PROD | 2014-01-21 → 2014-02-06 (+16d) | 2014-01-21 → 2014-02-06 (+16d) |  |  |  |  |  |
| 156 | Test Results Review and Reporting | 2014-01-22 → 2014-02-07 (+16d) | 2014-01-24 → 2014-02-10 (+17d) | 3d → 2d |  |  |  |  |
| 157 | Approval to deploy to PROD | 2014-01-24 → 2014-02-10 (+17d) | 2014-01-24 → 2014-02-10 (+17d) |  |  |  |  |  |
| 158 | **PRODUCTION** | 2014-01-27 → 2014-02-10 (+14d) | 2014-01-31 → 2014-02-14 (+14d) | 5d? → 4d |  |  |  |  |
| 159 | Request deployment to PRODUCTION | 2014-01-27 → 2014-02-10 (+14d) | 2014-01-27 → 2014-02-10 (+14d) | 1d? → 0d |  |  |  |  |
| 160 | Deploy to PRODUCTION | 2014-01-28 → 2014-02-11 (+14d) | 2014-01-30 → 2014-02-13 (+14d) |  |  |  |  |  |
| 161 | Update product landing page | 2014-01-31 → 2014-02-14 (+14d) | 2014-01-31 → 2014-02-14 (+14d) |  |  |  |  |  |
| 162 | QA smoke tests PRODUCTION | 2014-01-31 → 2014-02-14 (+14d) | 2014-01-31 → 2014-02-14 (+14d) |  |  |  |  |  |
| 163 | MILESTONE: RELEASE 1.4.2 | 2014-01-31 → 2014-02-14 (+14d) | 2014-01-31 → 2014-02-14 (+14d) |  |  |  |  |  |
| 164 | **User Support (as needed)** |  | 2014-02-14 → 2014-02-28 (+14d) | 274d → 284d |  |  |  |  |
| 167 | Support 1.4.2 | 2014-02-03 → 2014-02-17 (+14d) | 2014-02-14 → 2014-02-28 (+14d) |  |  |  |  |  |
